# lab1_1

How a schedule from MS Project changed from version to version. A marks actual dates.

## Version 1 (saved 2021-03-28, file lab5_3_1.mpp)

Note of the change: Add EPI

| ID | WBS | Task | Duration | Start | Finish | Predecessors | Total float |
| --- | --- | --- | --- | --- | --- | --- | --- |
| 1 |  | Начало проекта | 0w | 2021-03-01 | 2021-03-01 |  | 117d |
| 2 | 2 | **Анализ** | 25d | 2021-03-01 | 2021-04-06 |  | 0d |
| 3 |  | Анализ и проектирование ядра | 3w | 2021-03-01 | 2021-03-23 |  | 0d |
| 4 |  | Анализ и построение структуры базы объектов | 2w | 2021-03-23 | 2021-04-06 |  | 18d |
| 5 | 3 | **Разработка** | 40d | 2021-03-01 | 2021-04-27 |  | 15d |
| 6 |  | Разработка 2D графических элементов | 3w | 2021-03-01 | 2021-03-23 |  | 88d |
| 7 |  | Разработка 3D графических элементов | 2w | 2021-03-01 | 2021-03-16 | 6SS | 88d |
| 8 |  | Создание модели ядра | 5w | 2021-03-23 | 2021-04-27 | 3 | 0d |
| 9 |  | Разработка дизайна руководства | 1w | 2021-03-23 | 2021-03-30 |  | 81d |
| 10 |  | Разработка структуры сайта | 0d | 2021-03-25 | 2021-03-25 | 26SS | 81d |
| 11 |  | Разработка дизайна сайта | 1w | 2021-03-25 | 2021-04-01 | 10 | 81d |
| 12 | 4 | **Программирование** | 118d | 2021-03-01 | 2021-08-18 |  | 0d |
| 13 |  | Создание заставки | 3w | 2021-03-16 | 2021-04-13 | 7 | 88d |
| 14 |  | Программирование интерфейса | 3w | 2021-03-01 | 2021-03-23 |  | 60.88d |
| 15 |  | Программирование средств обработки базы объектов | 3w | 2021-04-06 | 2021-04-27 | 4 | 18d |
| 16 |  | Создание рабочей версии ядра | 11.6w | 2021-05-18 | 2021-08-18 | 22 | 0d |
| 17 | 5 | **Наполнение** | 100d | 2021-03-01 | 2021-07-23 |  | 18d |
| 18 |  | Наполнение базы объектов | 12w | 2021-04-27 | 2021-07-23 | 15 | 18d |
| 19 |  | Наполнение сайта | 3w | 2021-04-01 | 2021-04-22 | 11 | 81d |
| 20 |  | Создание мультимедиа – наполнения | 6w | 2021-03-01 | 2021-04-13 |  | 88d |
| 21 | 6 | **Тестирование** | 84d | 2021-04-13 | 2021-08-12 |  | 4d |
| 22 |  | Тестирование модели ядра | 1w | 2021-04-27 | 2021-05-05 | 8 | 0d |
| 23 |  | Тестирование сайта | 6.8w | 2021-04-13 | 2021-08-12 |  | 4d |
| 24 | 7 | **Документация** | 40d | 2021-03-25 | 2021-05-24 |  | 61d |
| 25 |  | Создание справочной системы | 2w | 2021-05-07 | 2021-05-24 | 14 | 61d |
| 26 |  | Написание руководства пользователя | 3w | 2021-03-25 | 2021-04-15 | 9SS+2d | 81d |
| 27 |  | Разработка дизайна интерфейса | 1d | 2021-03-01 | 2021-03-02 | 1 | 117d |
| 28 |  | Сдача сайта в эксплуатацию | 0w | 2021-08-12 | 2021-08-12 | 23 | 4d |

## Version 2 (saved 2021-03-28, file lab5_3_2.mpp)

Note of the change: Add EPI

Last finish 2021-08-18 → 2021-08-03 (-15d).

Changed:

| ID | Task | Start | Finish | Duration | Total float |
| --- | --- | --- | --- | --- | --- |
| 10 | Разработка структуры сайта |  | 2021-03-25 → 2021-03-26 (+1d) | 0d → 1d | 81d → 69d |
| 11 | Разработка дизайна сайта | 2021-03-25 → 2021-03-26 (+1d) | 2021-04-01 → 2021-04-02 (+1d) |  | 81d → 69d |
| 12 | **Программирование** |  | 2021-08-18 → 2021-08-03 (-15d) | 118d → 107d |  |
| 13 | Создание заставки |  | 2021-04-13 → 2021-04-14 (+1d) |  | 88d → 76d |
| 16 | Создание рабочей версии ядра |  | 2021-08-18 → 2021-08-03 (-15d) | 11.6w → 10w |  |
| 19 | Наполнение сайта | 2021-04-01 → 2021-04-02 (+1d) | 2021-04-22 → 2021-04-23 (+1d) |  | 81d → 69d |
| 21 | **Тестирование** |  | 2021-08-12 → 2021-05-19 (-85d) | 84d → 24d | 4d → 10d |
| 23 | Тестирование сайта |  | 2021-08-12 → 2021-05-19 (-85d) | 6.8w → 4w | 4d → 53d |
| 28 | Сдача сайта в эксплуатацию | 2021-08-12 → 2021-05-19 (-85d) | 2021-08-12 → 2021-05-19 (-85d) |  | 4d → 53d |

## Version 3 (saved 2021-03-28, file lab5_3_3.mpp)

Note of the change: Add EPI

Last finish stays 2021-08-03.

Added:

| ID | Task | Duration | Start | Finish | Constraint | Resources |
| --- | --- | --- | --- | --- | --- | --- |
| 28 | **Еженедельное совещание** | 101.12d | 2021-03-03 09:00 | 2021-07-28 10:00 |  |  |
| 29 | Еженедельное совещание 1 | 1h | 2021-03-03 09:00 | 2021-03-03 10:00 | start no earlier than 2021-03-03 09:00 | 3D аниматор; Web-дизайнер; Ведущий программист; Мультимедиа-корреспондент; Системный аналитик; Технический писатель; Художник-дизайнер |
| 30 | Еженедельное совещание 2 | 1h | 2021-03-10 09:00 | 2021-03-10 10:00 | start no earlier than 2021-03-10 09:00 | 3D аниматор; Web-дизайнер; Ведущий программист; Мультимедиа-корреспондент; Системный аналитик; Технический писатель; Художник-дизайнер |
| 31 | Еженедельное совещание 3 | 1h | 2021-03-17 09:00 | 2021-03-17 10:00 | start no earlier than 2021-03-17 09:00 | 3D аниматор; Web-дизайнер; Ведущий программист; Мультимедиа-корреспондент; Системный аналитик; Технический писатель; Художник-дизайнер |
| 32 | Еженедельное совещание 4 | 1h | 2021-03-24 09:00 | 2021-03-24 10:00 | start no earlier than 2021-03-24 09:00 | 3D аниматор; Web-дизайнер; Ведущий программист; Мультимедиа-корреспондент; Системный аналитик; Технический писатель; Художник-дизайнер |
| 33 | Еженедельное совещание 5 | 1h | 2021-03-31 09:00 | 2021-03-31 10:00 | start no earlier than 2021-03-31 09:00 | 3D аниматор; Web-дизайнер; Ведущий программист; Мультимедиа-корреспондент; Системный аналитик; Технический писатель; Художник-дизайнер |
| 34 | Еженедельное совещание 6 | 1h | 2021-04-07 09:00 | 2021-04-07 10:00 | start no earlier than 2021-04-07 09:00 | 3D аниматор; Web-дизайнер; Ведущий программист; Мультимедиа-корреспондент; Системный аналитик; Технический писатель; Художник-дизайнер |
| 35 | Еженедельное совещание 7 | 1h | 2021-04-14 09:00 | 2021-04-14 10:00 | start no earlier than 2021-04-14 09:00 | 3D аниматор; Web-дизайнер; Ведущий программист; Мультимедиа-корреспондент; Системный аналитик; Технический писатель; Художник-дизайнер |
| 36 | Еженедельное совещание 8 | 1h | 2021-04-21 09:00 | 2021-04-21 10:00 | start no earlier than 2021-04-21 09:00 | 3D аниматор; Web-дизайнер; Ведущий программист; Мультимедиа-корреспондент; Системный аналитик; Технический писатель; Художник-дизайнер |
| 37 | Еженедельное совещание 9 | 1h | 2021-04-28 09:00 | 2021-04-28 10:00 | start no earlier than 2021-04-28 09:00 | 3D аниматор; Web-дизайнер; Ведущий программист; Мультимедиа-корреспондент; Системный аналитик; Технический писатель; Художник-дизайнер |
| 38 | Еженедельное совещание 10 | 1h | 2021-05-05 09:00 | 2021-05-05 10:00 | start no earlier than 2021-05-05 09:00 | 3D аниматор; Web-дизайнер; Ведущий программист; Мультимедиа-корреспондент; Системный аналитик; Технический писатель; Художник-дизайнер |
| 39 | Еженедельное совещание 11 | 1h | 2021-05-12 09:00 | 2021-05-12 10:00 | start no earlier than 2021-05-12 09:00 | 3D аниматор; Web-дизайнер; Ведущий программист; Мультимедиа-корреспондент; Системный аналитик; Технический писатель; Художник-дизайнер |
| 40 | Еженедельное совещание 12 | 1h | 2021-05-19 09:00 | 2021-05-19 10:00 | start no earlier than 2021-05-19 09:00 | 3D аниматор; Web-дизайнер; Ведущий программист; Мультимедиа-корреспондент; Системный аналитик; Технический писатель; Художник-дизайнер |
| 41 | Еженедельное совещание 13 | 1h | 2021-05-26 09:00 | 2021-05-26 10:00 | start no earlier than 2021-05-26 09:00 | 3D аниматор; Web-дизайнер; Ведущий программист; Мультимедиа-корреспондент; Системный аналитик; Технический писатель; Художник-дизайнер |
| 42 | Еженедельное совещание 14 | 1h | 2021-06-02 09:00 | 2021-06-02 10:00 | start no earlier than 2021-06-02 09:00 | 3D аниматор; Web-дизайнер; Ведущий программист; Мультимедиа-корреспондент; Системный аналитик; Технический писатель; Художник-дизайнер |
| 43 | Еженедельное совещание 15 | 1h | 2021-06-09 09:00 | 2021-06-09 10:00 | start no earlier than 2021-06-09 09:00 | 3D аниматор; Web-дизайнер; Ведущий программист; Мультимедиа-корреспондент; Системный аналитик; Технический писатель; Художник-дизайнер |
| 44 | Еженедельное совещание 16 | 1h | 2021-06-16 09:00 | 2021-06-16 10:00 | start no earlier than 2021-06-16 09:00 | 3D аниматор; Web-дизайнер; Ведущий программист; Мультимедиа-корреспондент; Системный аналитик; Технический писатель; Художник-дизайнер |
| 45 | Еженедельное совещание 17 | 1h | 2021-06-23 09:00 | 2021-06-23 10:00 | start no earlier than 2021-06-23 09:00 | 3D аниматор; Web-дизайнер; Ведущий программист; Мультимедиа-корреспондент; Системный аналитик; Технический писатель; Художник-дизайнер |
| 46 | Еженедельное совещание 18 | 1h | 2021-06-30 09:00 | 2021-06-30 10:00 | start no earlier than 2021-06-30 09:00 | 3D аниматор; Web-дизайнер; Ведущий программист; Мультимедиа-корреспондент; Системный аналитик; Технический писатель; Художник-дизайнер |
| 47 | Еженедельное совещание 19 | 1h | 2021-07-07 09:00 | 2021-07-07 10:00 | start no earlier than 2021-07-07 09:00 | 3D аниматор; Web-дизайнер; Ведущий программист; Мультимедиа-корреспондент; Системный аналитик; Технический писатель; Художник-дизайнер |
| 48 | Еженедельное совещание 20 | 1h | 2021-07-14 09:00 | 2021-07-14 10:00 | start no earlier than 2021-07-14 09:00 | 3D аниматор; Web-дизайнер; Ведущий программист; Мультимедиа-корреспондент; Системный аналитик; Технический писатель; Художник-дизайнер |
| 49 | Еженедельное совещание 21 | 1h | 2021-07-21 09:00 | 2021-07-21 10:00 | start no earlier than 2021-07-21 09:00 | 3D аниматор; Web-дизайнер; Ведущий программист; Мультимедиа-корреспондент; Системный аналитик; Технический писатель; Художник-дизайнер |
| 50 | Еженедельное совещание 22 | 1h | 2021-07-28 09:00 | 2021-07-28 10:00 | start no earlier than 2021-07-28 09:00 | 3D аниматор; Web-дизайнер; Ведущий программист; Мультимедиа-корреспондент; Системный аналитик; Технический писатель; Художник-дизайнер |

Removed: 27 Разработка дизайна интерфейса

Changed:

| ID | Task | Start | Finish | Duration | Total float |
| --- | --- | --- | --- | --- | --- |
| 1 | Начало проекта | 2021-03-01 → 2021-03-01 09:00 | 2021-03-01 → 2021-03-01 09:00 |  | 106d → 107.38d |
| 2 | **Анализ** | 2021-03-01 → 2021-03-01 09:00 | 2021-04-06 → 2021-04-06 15:00 | 25d → 25.62d |  |
| 3 | Анализ и проектирование ядра | 2021-03-01 → 2021-03-01 09:00 | 2021-03-23 → 2021-03-23 12:00 |  |  |
| 4 | Анализ и построение структуры базы объектов | 2021-03-23 → 2021-03-23 13:00 | 2021-04-06 → 2021-04-06 15:00 |  | 7d → 6.75d |
| 5 | **Разработка** | 2021-03-01 → 2021-03-01 09:00 | 2021-04-27 → 2021-04-27 12:00 | 40d → 40.38d | 15d → 15.38d |
| 6 | Разработка 2D графических элементов | 2021-03-01 → 2021-03-01 09:00 | 2021-03-23 → 2021-04-06 14:00 (+14d) |  | 76d → 75.62d |
| 7 | Разработка 3D графических элементов | 2021-03-01 → 2021-03-01 09:00 | 2021-03-16 → 2021-03-16 11:00 |  | 76d → 75.62d |
| 8 | Создание модели ядра | 2021-03-23 → 2021-03-23 13:00 | 2021-04-27 → 2021-04-27 12:00 |  |  |
| 9 | Разработка дизайна руководства | 2021-03-23 → 2021-03-23 09:00 | 2021-03-30 → 2021-03-30 10:00 |  | 69d → 68.88d |
| 10 | Разработка структуры сайта | 2021-03-25 → 2021-03-25 09:00 | 2021-03-26 → 2021-03-26 09:00 |  | 69d → 68.88d |
| 11 | Разработка дизайна сайта | 2021-03-26 → 2021-03-26 09:00 | 2021-04-02 → 2021-04-02 10:00 |  | 69d → 68.88d |
| 12 | **Программирование** | 2021-03-01 → 2021-03-01 09:00 | 2021-08-03 → 2021-08-03 12:00 | 107d → 107.38d |  |
| 13 | Создание заставки | 2021-03-16 → 2021-03-16 11:00 | 2021-04-14 → 2021-04-14 16:00 |  | 76d → 75.62d |
| 14 | Программирование интерфейса | 2021-03-01 → 2021-03-01 09:00 | 2021-03-23 → 2021-03-23 09:00 |  |  |
| 15 | Программирование средств обработки базы объектов | 2021-04-06 → 2021-04-06 15:00 | 2021-04-27 → 2021-04-27 15:00 |  | 7d → 6.75d |
| 16 | Создание рабочей версии ядра | 2021-05-18 → 2021-05-18 13:00 | 2021-08-03 → 2021-08-03 12:00 |  |  |
| 17 | **Наполнение** | 2021-03-01 → 2021-03-01 09:00 | 2021-07-23 → 2021-07-23 15:00 | 100d → 100.62d | 7d → 6.75d |
| 18 | Наполнение базы объектов | 2021-04-27 → 2021-04-27 15:00 | 2021-07-23 → 2021-07-23 15:00 |  | 7d → 6.75d |
| 19 | Наполнение сайта | 2021-04-02 → 2021-04-02 10:00 | 2021-04-23 → 2021-04-23 14:00 |  | 69d → 68.88d |
| 20 | Создание мультимедиа – наполнения | 2021-03-01 → 2021-03-01 09:00 | 2021-04-13 → 2021-04-13 16:00 |  | 77d → 76.62d |
| 21 | **Тестирование** | 2021-04-13 → 2021-04-13 09:00 | 2021-05-19 → 2021-05-19 09:00 |  | 10d → 10.38d |
| 22 | Тестирование модели ядра | 2021-04-27 → 2021-04-27 13:00 | 2021-05-05 → 2021-05-05 12:00 |  |  |
| 23 | Тестирование сайта | 2021-04-13 → 2021-04-13 09:00 | 2021-05-19 → 2021-05-19 09:00 |  | 53d → 53.38d |
| 24 | **Документация** | 2021-03-25 → 2021-03-25 09:00 | 2021-05-24 → 2021-05-24 11:00 | 40d → 40.25d | 50d → 50.12d |
| 25 | Создание справочной системы | 2021-05-07 → 2021-05-07 09:00 | 2021-05-24 → 2021-05-24 11:00 |  | 50d → 50.12d |
| 26 | Написание руководства пользователя | 2021-03-25 → 2021-03-25 09:00 | 2021-04-15 → 2021-04-15 12:00 |  | 69d → 68.88d |
| 27 | Сдача сайта в эксплуатацию | 2021-05-19 → 2021-05-19 09:00 | 2021-05-19 → 2021-05-19 09:00 |  | 53d → 53.38d |

## Version 4 (saved 2021-03-28, file lab5_3_5.mpp)

Note of the change: Add EPI

Last finish 2021-08-03 → 2021-09-09 (+37d).

Added:

| ID | Task | Duration | Start | Finish | Constraint |
| --- | --- | --- | --- | --- | --- |
| 51 | Еженедельное совещание 23 | 1h | 2021-08-04 09:00 | 2021-08-04 10:00 | start no earlier than 2021-08-04 09:00 |
| 52 | Еженедельное совещание 24 | 1h | 2021-08-11 09:00 | 2021-08-11 10:00 | start no earlier than 2021-08-11 09:00 |
| 53 | Еженедельное совещание 25 | 1h | 2021-08-18 09:00 | 2021-08-18 10:00 | start no earlier than 2021-08-18 09:00 |
| 54 | Еженедельное совещание 26 | 1h | 2021-08-25 09:00 | 2021-08-25 10:00 | start no earlier than 2021-08-25 09:00 |
| 55 | Еженедельное совещание 27 | 1h | 2021-09-01 09:00 | 2021-09-01 10:00 | start no earlier than 2021-09-01 09:00 |
| 56 | Еженедельное совещание 28 | 1h | 2021-09-08 09:00 | 2021-09-08 10:00 | start no earlier than 2021-09-08 09:00 |

Changed:

| ID | Task | Start | Finish | Duration | Total float | Predecessors | Other |
| --- | --- | --- | --- | --- | --- | --- | --- |
| 2 | **Анализ** |  | 2021-04-06 15:00 → 2021-04-06 12:00 | 25.62d → 25.38d | 0d → 0.5d |  |  |
| 4 | Анализ и построение структуры базы объектов |  | 2021-04-06 15:00 → 2021-04-06 12:00 |  | 6.75d → 34d |  | resources Системный аналитик → Системный аналитик; Дополнительный сервер |
| 5 | **Разработка** |  | 2021-04-27 12:00 → 2021-04-28 14:00 (+1d) | 40.38d → 41.5d | 15.38d → 15.88d |  |  |
| 8 | Создание модели ядра |  | 2021-04-27 12:00 → 2021-04-28 14:00 (+1d) |  | 0d → 0.5d |  |  |
| 11 | Разработка дизайна сайта |  |  |  | 68.88d → 21.25d |  | resources 3D аниматор; Web-дизайнер; Художник-дизайнер [250%] → 3D аниматор; Web-дизайнер; Художник-дизайнер |
| 12 | **Программирование** | 2021-03-01 09:00 → 2021-03-16 11:00 (+15d) | 2021-08-03 12:00 → 2021-08-25 14:00 (+22d) | 107.38d → 113.25d | 0d → 0.5d |  |  |
| 14 | Программирование интерфейса | 2021-03-01 09:00 → 2021-08-04 14:00 (+156d) | 2021-03-23 09:00 → 2021-08-25 14:00 (+155d) |  | 51.88d → 0.5d | none → 13, 16 |  |
| 15 | Программирование средств обработки базы объектов | 2021-04-06 15:00 → 2021-04-06 12:00 | 2021-04-27 15:00 → 2021-04-27 12:00 |  | 6.75d → 34d |  | resources Программист#3; Программист#4 → Программист#3; Программист#4; Дополнительный сервер |
| 16 | Создание рабочей версии ядра | 2021-05-18 13:00 → 2021-05-19 14:00 (+1d) | 2021-08-03 12:00 → 2021-08-04 14:00 (+1d) |  | 0d → 0.5d |  |  |
| 17 | **Наполнение** | 2021-03-01 09:00 → 2021-04-02 10:00 (+32d) | 2021-07-23 15:00 → 2021-07-23 12:00 | 100.62d → 77.25d | 6.75d → 21.25d |  |  |
| 18 | Наполнение базы объектов | 2021-04-27 15:00 → 2021-04-27 12:00 | 2021-07-23 15:00 → 2021-07-23 12:00 |  | 6.75d → 34d |  | resources Наборщик данных#1; Наборщик данных#2; Наборщик данных#3; Наборщик данных#4; Наборщик данных#5 → Наборщик данных#1; Наборщик данных#2; Наборщик данных#3; Наборщик данных#4; Наборщик данных#5; Дополнительный сервер |
| 20 | Создание мультимедиа – наполнения | 2021-03-01 09:00 → 2021-04-14 16:00 (+44d) | 2021-04-13 16:00 → 2021-06-01 11:00 (+49d) |  | 76.62d → 71.12d | none → 13 |  |
| 21 | **Тестирование** | 2021-04-13 09:00 → 2021-04-16 14:00 (+3d) | 2021-05-19 09:00 → 2021-08-11 10:00 (+84d) | 24d → 79.62d | 10.38d → 8.5d |  |  |
| 22 | Тестирование модели ядра | 2021-04-27 13:00 → 2021-04-28 14:00 (+1d) | 2021-05-05 12:00 → 2021-05-06 14:00 (+1d) |  | 0d → 0.5d |  |  |
| 23 | Тестирование сайта | 2021-04-13 09:00 → 2021-04-16 14:00 (+3d) | 2021-05-19 09:00 → 2021-08-11 10:00 (+84d) |  | 53.38d → 21.25d | none → 19FS-1w |  |
| 24 | **Документация** |  | 2021-05-24 11:00 → 2021-09-09 12:00 (+108d) | 40.25d → 117.38d | 50.12d → 0d |  |  |
| 25 | Создание справочной системы | 2021-05-07 09:00 → 2021-08-26 09:00 (+111d) | 2021-05-24 11:00 → 2021-09-09 12:00 (+108d) |  | 50.12d → 0d |  | constraint none → start no earlier than 2021-08-26 09:00 |
| 27 | Сдача сайта в эксплуатацию | 2021-05-19 09:00 → 2021-08-11 10:00 (+84d) | 2021-05-19 09:00 → 2021-08-11 10:00 (+84d) |  | 53.38d → 21.25d |  |  |
| 28 | **Еженедельное совещание** |  | 2021-07-28 10:00 → 2021-09-08 10:00 (+42d) | 101.12d → 131.12d | 4.25d → 1.25d |  |  |

## Version 5 (saved 2021-03-28, file lab5_3_4.mpp)

Note of the change: Add EPI

Last finish 2021-09-09 → 2021-08-03 (-37d).

Removed: 51 Еженедельное совещание 23; 52 Еженедельное совещание 24; 53 Еженедельное совещание 25; 54 Еженедельное совещание 26; 55 Еженедельное совещание 27; 56 Еженедельное совещание 28

Changed:

| ID | Task | Start | Finish | Duration | Total float | Predecessors | Other |
| --- | --- | --- | --- | --- | --- | --- | --- |
| 5 | **Разработка** |  | 2021-04-28 14:00 → 2021-04-27 12:00 (-1d) | 41.5d → 40.38d | 15.88d → 15.38d |  |  |
| 8 | Создание модели ядра |  | 2021-04-28 14:00 → 2021-04-27 12:00 (-1d) |  | 0.5d → 0d |  |  |
| 11 | Разработка дизайна сайта |  |  |  | 21.25d → 68.88d |  | resources 3D аниматор; Web-дизайнер; Художник-дизайнер → 3D аниматор; Web-дизайнер; Художник-дизайнер [250%] |
| 12 | **Программирование** | 2021-03-16 11:00 → 2021-03-01 09:00 (-15d) | 2021-08-25 14:00 → 2021-08-03 12:00 (-22d) | 113.25d → 107.38d | 0.5d → 0d |  |  |
| 14 | Программирование интерфейса | 2021-08-04 14:00 → 2021-03-01 09:00 (-156d) | 2021-08-25 14:00 → 2021-03-23 09:00 (-155d) |  | 0.5d → 51.88d | 13, 16 → none |  |
| 16 | Создание рабочей версии ядра | 2021-05-19 14:00 → 2021-05-18 13:00 (-1d) | 2021-08-04 14:00 → 2021-08-03 12:00 (-1d) |  | 0.5d → 0d |  |  |
| 17 | **Наполнение** | 2021-04-02 10:00 → 2021-03-01 09:00 (-32d) |  | 77.25d → 100.38d | 21.25d → 7d |  |  |
| 20 | Создание мультимедиа – наполнения | 2021-04-14 16:00 → 2021-03-01 09:00 (-44d) | 2021-06-01 11:00 → 2021-04-13 16:00 (-49d) |  | 71.12d → 76.62d | 13 → none |  |
| 21 | **Тестирование** | 2021-04-16 14:00 → 2021-04-13 09:00 (-3d) | 2021-08-11 10:00 → 2021-05-19 09:00 (-84d) | 79.62d → 24d | 8.5d → 10.38d |  |  |
| 22 | Тестирование модели ядра | 2021-04-28 14:00 → 2021-04-27 13:00 (-1d) | 2021-05-06 14:00 → 2021-05-05 12:00 (-1d) |  | 0.5d → 0d |  |  |
| 23 | Тестирование сайта | 2021-04-16 14:00 → 2021-04-13 09:00 (-3d) | 2021-08-11 10:00 → 2021-05-19 09:00 (-84d) |  | 21.25d → 53.38d | 19FS-1w → none |  |
| 24 | **Документация** |  | 2021-09-09 12:00 → 2021-05-24 11:00 (-108d) | 117.38d → 40.25d | 0d → 50.12d |  |  |
| 25 | Создание справочной системы | 2021-08-26 09:00 → 2021-05-07 09:00 (-111d) | 2021-09-09 12:00 → 2021-05-24 11:00 (-108d) |  | 0d → 50.12d |  | constraint start no earlier than 2021-08-26 09:00 → none |
| 27 | Сдача сайта в эксплуатацию | 2021-08-11 10:00 → 2021-05-19 09:00 (-84d) | 2021-08-11 10:00 → 2021-05-19 09:00 (-84d) |  | 21.25d → 53.38d |  |  |
| 28 | **Еженедельное совещание** |  | 2021-09-08 10:00 → 2021-07-28 10:00 (-42d) | 131.12d → 101.12d | 1.25d → 4.25d |  |  |

## Version 6 (saved 2021-03-28, file lab5_3.mpp)

Note of the change: Add EPI

Last finish 2021-08-03 → 2021-07-28 (-6d).

Changed:

| ID | Task | Start | Finish | Duration | Total float | Predecessors | Other |
| --- | --- | --- | --- | --- | --- | --- | --- |
| 5 | **Разработка** |  | 2021-04-27 12:00 → 2021-04-06 14:00 (-21d) | 40.38d → 25.5d | 15.38d → 18.42d |  |  |
| 8 | Создание модели ядра |  | 2021-04-27 12:00 → 2021-04-05 13:20 (-22d) | 5w → 1.81w | 0d → 12.14d |  | resources Ведущий программист; Программист#2 → Ведущий программист; Программист#2; Программист#1; Программист#3; Программист#4 |
| 11 | Разработка дизайна сайта |  |  |  | 68.88d → 3.42d |  | resources 3D аниматор; Web-дизайнер; Художник-дизайнер [250%] → 3D аниматор; Web-дизайнер; Художник-дизайнер |
| 12 | **Программирование** | 2021-03-01 09:00 → 2021-03-16 11:00 (+15d) | 2021-08-03 12:00 → 2021-06-29 13:34 (-35d) | 107.38d → 72.2d | 0d → 9.68d |  |  |
| 14 | Программирование интерфейса | 2021-03-01 09:00 → 2021-06-18 08:34 (+109d) | 2021-03-23 09:00 → 2021-06-29 13:34 (+98d) | 3w → 1.5w | 51.88d → 9.68d | none → 13, 16 | resources Программист#3; Программист#4 → Программист#3; Программист#4; Программист#1; Программист#2 |
| 16 | Создание рабочей версии ядра | 2021-05-18 13:00 → 2021-04-26 08:00 (-22d) | 2021-08-03 12:00 → 2021-06-18 08:34 (-46d) | 10w → 6.69w | 0d → 9.68d |  | resources Ведущий программист; Программист#1; Программист#2 → Ведущий программист; Программист#1; Программист#2; Программист#3; Программист#4 |
| 17 | **Наполнение** | 2021-03-01 09:00 → 2021-04-02 10:00 (+32d) |  | 100.38d → 77.25d | 7d → 2.75d |  |  |
| 20 | Создание мультимедиа – наполнения | 2021-03-01 09:00 → 2021-04-14 16:00 (+44d) | 2021-04-13 16:00 → 2021-06-01 11:00 (+49d) |  | 76.62d → 39.88d | none → 13 |  |
| 21 | **Тестирование** | 2021-04-13 09:00 → 2021-04-05 13:20 (-8d) | 2021-05-19 09:00 → 2021-07-22 15:36 (+64d) | 24d → 75.28d | 10.38d → 3.42d |  |  |
| 22 | Тестирование модели ядра | 2021-04-27 13:00 → 2021-04-05 13:20 (-22d) | 2021-05-05 12:00 → 2021-04-12 13:20 (-23d) |  | 0d → 12.14d |  |  |
| 23 | Тестирование сайта | 2021-04-13 09:00 → 2021-04-16 14:00 (+3d) | 2021-05-19 09:00 → 2021-07-22 15:36 (+64d) | 4w → 3.15w | 53.38d → 3.42d | none → 19FS-1w | resources Ведущий программист; Программист#1; Программист#2 → Ведущий программист; Программист#1; Программист#2; Программист#3; Программист#4 |
| 24 | **Документация** |  | 2021-05-24 11:00 → 2021-07-15 09:00 (+52d) | 40.25d → 77d | 50.12d → 3.42d |  |  |
| 25 | Создание справочной системы | 2021-05-07 09:00 → 2021-06-30 10:00 (+54d) | 2021-05-24 11:00 → 2021-07-15 09:00 (+52d) |  | 50.12d → 9.12d |  | constraint none → start no earlier than 2021-06-30 09:00 |
| 27 | Сдача сайта в эксплуатацию | 2021-05-19 09:00 → 2021-07-22 15:36 (+64d) | 2021-05-19 09:00 → 2021-07-22 15:36 (+64d) |  | 53.38d → 3.42d | 23 → 23, 25 |  |

## Version 7 (data date 2021-04-09, saved 2021-04-14, file lab5_2.mpp)

Note of the change: Add EPI

Last finish 2021-07-28 → 2021-08-10 (+13d). Complete tasks 0 → 11.

Added:

| ID | Task | Duration | Start | Finish | Predecessors | Resources |
| --- | --- | --- | --- | --- | --- | --- |
| 2 | **Разработка дизайна интерфейса** | 84.1d | 2021-03-01 09:00 A | 2021-07-01 09:46 | 1 |  |
| 3 | **Создание интерфейса** | 30.38d | 2021-03-01 09:00 A | 2021-04-13 12:00 A |  |  |
| 8 | **Построение базы объектов** | 90.38d | 2021-03-23 13:00 A | 2021-07-30 16:00 |  | Дополнительный сервер |
| 12 | **Создание ядра GIS** | 76.6d | 2021-03-01 09:00 A | 2021-06-21 14:46 |  |  |
| 19 | **Создание руководства пользователя** | 19.4d | 2021-06-17 09:46 | 2021-07-14 14:00 | 7FS-10d |  |
| 22 | **Создание web–сайта и поддержка** | 26.78d | 2021-06-21 09:46 | 2021-07-27 17:00 |  |  |

Removed: 2 Анализ; 5 Разработка; 12 Программирование; 17 Наполнение; 21 Тестирование; 24 Документация

Changed:

| ID | Task | Start | Finish | Duration | Complete | Total float | Predecessors | Other |
| --- | --- | --- | --- | --- | --- | --- | --- | --- |
| 1 | Начало проекта | 2021-03-01 09:00 A | 2021-03-01 09:00 A |  | 0% → 100% | 103.12d → none |  | baseline start none → 2021-03-01 09:00; baseline finish none → 2021-03-01 09:00 |
| 4 | Разработка 2D графических элементов | 2021-03-01 09:00 A | 2021-04-06 14:00 → 2021-03-23 12:00 A (-14d) |  | 0% → 100% | 39.88d → none |  | baseline start none → 2021-03-01 09:00; baseline finish none → 2021-03-23 12:00 |
| 5 | Разработка 3D графических элементов | 2021-03-01 09:00 A | 2021-03-16 11:00 → 2021-03-23 18:00 A (+7d) | 2w → 3.12w | 0% → 100% | 39.88d → none |  | baseline start none → 2021-03-01 09:00; baseline finish none → 2021-03-16 11:00 |
| 6 | Создание заставки | 2021-03-16 11:00 → 2021-03-23 09:00 A (+7d) | 2021-04-14 16:00 → 2021-04-13 12:00 A (-1d) |  | 0% → 100% | 39.88d → none |  | baseline start none → 2021-03-16 11:00; baseline finish none → 2021-04-06 15:00 |
| 7 | Программирование интерфейса | 2021-06-18 08:34 → 2021-06-21 14:46 (+3d) | 2021-06-29 13:34 → 2021-07-01 09:46 (+2d) |  |  | 9.68d → 0d | 6, 16 → 3, 12 | baseline start none → 2021-06-11 13:46; baseline finish none → 2021-06-24 08:46 |
| 9 | Анализ и построение структуры базы объектов | 2021-03-23 13:00 A | 2021-04-06 12:00 → 2021-04-13 16:00 (+7d) |  | 0% → 66% | 2.75d → 2.25d |  | resources Системный аналитик; Дополнительный сервер → Системный аналитик; baseline start none → 2021-03-23 13:00; baseline finish none → 2021-04-06 15:00 |
| 10 | Программирование средств обработки базы объектов | 2021-04-06 12:00 → 2021-04-13 16:00 A (+7d) | 2021-04-27 12:00 → 2021-05-05 16:00 (+8d) |  | 0% → 15% | 2.75d → 6.55d |  | resources Программист#3; Программист#4; Дополнительный сервер → Программист#3; Программист#4; baseline start none → 2021-04-06 15:00; baseline finish none → 2021-04-27 15:00 |
| 11 | Наполнение базы объектов | 2021-04-27 12:00 → 2021-05-05 16:00 (+8d) | 2021-07-23 12:00 → 2021-07-30 16:00 (+7d) |  |  | 2.75d → 6.55d |  | resources Наборщик данных#1; Наборщик данных#2; Наборщик данных#3; Наборщик данных#4; Наборщик данных#5; Дополнительный сервер → Наборщик данных#1; Наборщик данных#2; Наборщик данных#3; Наборщик данных#4; Наборщик данных#5; baseline start none → 2021-04-27 15:00; baseline finish none → 2021-07-23 15:00 |
| 13 | Анализ и проектирование ядра | 2021-03-01 09:00 A | 2021-03-23 12:00 → 2021-04-08 09:49 (+16d) | 3w → 3.3w | 0% → 82% | 12.14d → 49.49d |  | baseline start none → 2021-03-01 09:00; baseline finish none → 2021-03-23 12:00 |
| 14 | Создание модели ядра | 2021-03-23 13:00 A | 2021-04-05 13:20 → 2021-04-06 13:49 A (+1d) | 1.81w → 2.02w | 0% → 100% | 12.14d → none |  | resources Ведущий программист; Программист#2; Программист#1; Программист#3; Программист#4 → Ведущий программист; Программист#1; Программист#2; Программист#3; Программист#4; baseline start none → 2021-03-23 13:00; baseline finish none → 2021-04-06 13:49 |
| 15 | Тестирование модели ядра | 2021-04-05 13:20 → 2021-04-09 09:00 A (+4d) | 2021-04-12 13:20 → 2021-04-16 09:00 (+4d) |  | 0% → 48% | 12.14d → 0d |  | baseline start none → 2021-04-06 13:49; baseline finish none → 2021-04-13 13:49 |
| 16 | Создание рабочей версии ядра | 2021-04-26 08:00 → 2021-04-16 09:00 (-10d) | 2021-06-18 08:34 → 2021-06-21 14:46 (+3d) | 6.69w → 8.72w |  | 9.68d → 0d |  | baseline start none → 2021-04-13 13:49; baseline finish none → 2021-06-11 13:46 |
| 17 | Создание мультимедиа – наполнения | 2021-04-14 16:00 → 2021-04-06 15:00 A (-8d) | 2021-06-01 11:00 → 2021-05-26 17:00 (-6d) |  | 0% → 7% | 39.88d → 52.43d | 6 → 3 | baseline start none → 2021-04-06 15:00; baseline finish none → 2021-05-21 14:00 |
| 18 | Создание справочной системы | 2021-06-30 10:00 → 2021-07-13 16:00 (+13d) | 2021-07-15 09:00 → 2021-07-29 17:00 (+14d) |  |  | 9.12d → 7.43d |  | constraint start no earlier than 2021-06-30 09:00 → none; baseline start none → 2021-07-06 14:46; baseline finish none → 2021-07-21 15:46 |
| 20 | Разработка дизайна руководства | 2021-03-23 09:00 → 2021-06-17 09:46 (+86d) | 2021-03-30 10:00 → 2021-06-25 08:46 (+87d) |  |  | 3.42d → 0d |  | baseline start none → 2021-06-09 08:46; baseline finish none → 2021-06-17 14:46 |
| 21 | Написание руководства пользователя | 2021-03-25 09:00 → 2021-06-21 09:46 (+88d) | 2021-04-15 12:00 → 2021-07-14 14:00 (+90d) |  |  | 3.42d → 0d |  | baseline start none → 2021-06-11 08:46; baseline finish none → 2021-07-06 14:46 |
| 23 | Разработка структуры сайта | 2021-03-25 09:00 → 2021-06-21 09:46 (+88d) | 2021-03-26 09:00 → 2021-06-21 09:46 (+87d) | 1d → 0d |  | 3.42d → 0d |  | baseline start none → 2021-06-11 08:46; baseline finish none → 2021-06-11 08:46 |
| 24 | Разработка дизайна сайта | 2021-03-26 09:00 → 2021-06-21 09:46 (+87d) | 2021-04-02 10:00 → 2021-07-02 15:46 (+91d) | 1w → 1.7w |  | 3.42d → 0d |  | baseline start none → 2021-06-11 08:46; baseline finish none → 2021-06-25 09:46 |
| 25 | Наполнение сайта | 2021-04-02 10:00 → 2021-07-02 15:46 (+91d) | 2021-04-23 14:00 → 2021-07-27 17:00 (+95d) |  |  | 3.42d → 0d |  | baseline start none → 2021-06-25 09:46; baseline finish none → 2021-07-19 14:00 |
| 26 | Тестирование сайта | 2021-04-16 14:00 → 2021-07-21 08:00 (+96d) | 2021-07-22 15:36 → 2021-08-10 11:25 (+19d) | 3.15w → 2.86w |  | 3.42d → 0d | 25FS-1w → 22FS-1w | baseline start none → 2021-07-12 14:00; baseline finish none → 2021-07-30 10:25 |
| 27 | Сдача сайта в эксплуатацию | 2021-07-22 15:36 → 2021-08-10 11:25 (+19d) | 2021-07-22 15:36 → 2021-08-10 11:25 (+19d) |  |  | 3.42d → 0d | 26, 18 → 26 | baseline start none → 2021-07-30 10:25; baseline finish none → 2021-07-30 10:25 |
| 28 | **Еженедельное совещание** | 2021-03-03 09:00 A |  |  | 0% → 27% | 0d → 9.18d |  | baseline start none → 2021-03-03 09:00; baseline finish none → 2021-07-28 10:00 |
| 29 | Еженедельное совещание 1 | 2021-03-03 09:00 A | 2021-03-03 10:00 A |  | 0% → 100% | 105.5d → none |  | baseline start none → 2021-03-03 09:00; baseline finish none → 2021-03-03 10:00 |
| 30 | Еженедельное совещание 2 | 2021-03-10 09:00 A | 2021-03-10 10:00 A |  | 0% → 100% | 101.5d → none |  | baseline start none → 2021-03-10 09:00; baseline finish none → 2021-03-10 10:00 |
| 31 | Еженедельное совещание 3 | 2021-03-17 09:00 A | 2021-03-17 10:00 A |  | 0% → 100% | 96.5d → none |  | baseline start none → 2021-03-17 09:00; baseline finish none → 2021-03-17 10:00 |
| 32 | Еженедельное совещание 4 | 2021-03-24 09:00 A | 2021-03-24 10:00 A |  | 0% → 100% | 91.5d → none |  | baseline start none → 2021-03-24 09:00; baseline finish none → 2021-03-24 10:00 |
| 33 | Еженедельное совещание 5 | 2021-03-31 09:00 A | 2021-03-31 10:00 A |  | 0% → 100% | 86.5d → none |  | baseline start none → 2021-03-31 09:00; baseline finish none → 2021-03-31 10:00 |
| 34 | Еженедельное совещание 6 | 2021-04-07 09:00 A | 2021-04-07 10:00 A |  | 0% → 100% | 81.5d → none |  | baseline start none → 2021-04-07 09:00; baseline finish none → 2021-04-07 10:00 |
| 35 | Еженедельное совещание 7 |  |  |  |  | 76.5d → 81.18d |  | baseline start none → 2021-04-14 09:00; baseline finish none → 2021-04-14 10:00 |
| 36 | Еженедельное совещание 8 |  |  |  |  | 71.5d → 76.18d |  | baseline start none → 2021-04-21 09:00; baseline finish none → 2021-04-21 10:00 |
| 37 | Еженедельное совещание 9 |  |  |  |  | 66.5d → 71.18d |  | baseline start none → 2021-04-28 09:00; baseline finish none → 2021-04-28 10:00 |
| 38 | Еженедельное совещание 10 |  |  |  |  | 62.5d → 67.18d |  | baseline start none → 2021-05-05 09:00; baseline finish none → 2021-05-05 10:00 |
| 39 | Еженедельное совещание 11 |  |  |  |  | 58.5d → 63.18d |  | baseline start none → 2021-05-12 09:00; baseline finish none → 2021-05-12 10:00 |
| 40 | Еженедельное совещание 12 |  |  |  |  | 53.5d → 58.18d |  | baseline start none → 2021-05-19 09:00; baseline finish none → 2021-05-19 10:00 |
| 41 | Еженедельное совещание 13 |  |  |  |  | 48.5d → 53.18d |  | baseline start none → 2021-05-26 09:00; baseline finish none → 2021-05-26 10:00 |
| 42 | Еженедельное совещание 14 |  |  |  |  | 43.5d → 48.18d |  | baseline start none → 2021-06-02 09:00; baseline finish none → 2021-06-02 10:00 |
| 43 | Еженедельное совещание 15 |  |  |  |  | 38.5d → 43.18d |  | baseline start none → 2021-06-09 09:00; baseline finish none → 2021-06-09 10:00 |
| 44 | Еженедельное совещание 16 |  |  |  |  | 34.5d → 39.18d |  | baseline start none → 2021-06-16 09:00; baseline finish none → 2021-06-16 10:00 |
| 45 | Еженедельное совещание 17 |  |  |  |  | 29.5d → 34.18d |  | baseline start none → 2021-06-23 09:00; baseline finish none → 2021-06-23 10:00 |
| 46 | Еженедельное совещание 18 |  |  |  |  | 24.5d → 29.18d |  | baseline start none → 2021-06-30 09:00; baseline finish none → 2021-06-30 10:00 |
| 47 | Еженедельное совещание 19 |  |  |  |  | 19.5d → 24.18d |  | baseline start none → 2021-07-07 09:00; baseline finish none → 2021-07-07 10:00 |
| 48 | Еженедельное совещание 20 |  |  |  |  | 14.5d → 19.18d |  | baseline start none → 2021-07-14 09:00; baseline finish none → 2021-07-14 10:00 |
| 49 | Еженедельное совещание 21 |  |  |  |  | 9.5d → 14.18d |  | baseline start none → 2021-07-21 09:00; baseline finish none → 2021-07-21 10:00 |
| 50 | Еженедельное совещание 22 |  |  |  |  | 0d → 9.18d |  | baseline start none → 2021-07-28 09:00; baseline finish none → 2021-07-28 10:00 |

## Version 8 (data date 2021-04-09, saved 2021-04-14, file lab5_1.mpp)

Note of the change: Add EPI

Last finish stays 2021-08-10. Complete tasks 11 → 12.

Changed:

| ID | Task | Finish | Duration | Complete | Total float |
| --- | --- | --- | --- | --- | --- |
| 5 | Разработка 3D графических элементов | 2021-03-23 18:00 A → 2021-03-23 11:00 A | 3.12w → 3w |  |  |
| 12 | **Создание ядра GIS** |  |  | 35% → 37% |  |
| 13 | Анализ и проектирование ядра | 2021-04-08 09:49 A |  | 82% → 100% | 49.49d → none |
| 15 | Тестирование модели ядра |  |  | 48% → 18% |  |
| 17 | Создание мультимедиа – наполнения | 2021-05-26 17:00 → 2021-05-25 16:00 (-1d) |  | 7% → 10% | 52.43d → 53.55d |
