# Lab4.1

How a schedule from MS Project changed from version to version. A marks actual dates.

## Version 1 (data date 2022-04-30, saved 2022-04-05, file Lab4.1.mpp)

Note of the change: Add EPI

| ID | WBS | Task | Duration | Start | Finish | Predecessors | Complete | Total float | Constraint |
| --- | --- | --- | --- | --- | --- | --- | --- | --- | --- |
| 1 |  | Начало проекта | 0w | 2022-03-01 09:00 A | 2022-03-01 09:00 A |  | 100% |  |  |
| 2 | 2 | **Разработка дизайна интерфейса** | 85.94d | 2022-03-01 09:00 A | 2022-07-07 08:33 | 1 | 83% | 0d |  |
| 3 | 2.1 | **Создание интерфейса** | 25.75d | 2022-03-01 09:00 A | 2022-04-07 16:00 A |  | 100% |  |  |
| 4 |  | Разработка 2D графических элементов | 3w | 2022-03-01 09:00 A | 2022-03-24 14:45 A |  | 100% |  |  |
| 5 |  | Разработка 3D графических элементов | 3.7w | 2022-03-01 09:00 A | 2022-03-29 17:00 A | 4SS | 100% |  |  |
| 6 |  | Создание заставки | 3w | 2022-03-17 13:00 A | 2022-04-07 16:00 A | 5 | 100% |  |  |
| 7 |  | Программирование интерфейса | 2w | 2022-06-24 09:33 | 2022-07-07 08:33 | 3, 12 |  | 0d |  |
| 8 | 3 | **Построение базы объектов** | 86.31d | 2022-03-24 14:36 A | 2022-07-29 08:05 |  | 29% | 16.16d |  |
| 9 |  | Анализ и построение структуры базы объектов | 2w | 2022-03-24 14:36 A | 2022-04-07 17:00 A |  | 100% |  |  |
| 10 |  | Программирование средств обработки базы объектов | 3w | 2022-04-11 09:05 A | 2022-05-03 08:05 | 9 | 99% | 16.16d |  |
| 11 |  | Наполнение базы объектов | 12w | 2022-05-03 08:05 | 2022-07-29 08:05 | 10 |  | 16.16d |  |
| 12 | 4 | **Создание ядра GIS** | 77.07d | 2022-03-01 09:00 A | 2022-06-24 09:33 |  | 51% | 0d |  |
| 13 |  | Анализ и проектирование ядра | 3.01w | 2022-03-01 09:00 A | 2022-03-24 15:00 A |  | 100% |  |  |
| 14 |  | Создание модели ядра | 2.03w | 2022-03-24 15:00 A | 2022-04-07 16:05 A | 13 | 100% |  |  |
| 15 |  | Тестирование модели ядра | 0.25w | 2022-04-07 16:05 A | 2022-04-11 09:05 A | 14 | 100% |  |  |
| 16 |  | Создание рабочей версии ядра | 10.94w | 2022-04-11 09:05 A | 2022-06-24 09:33 | 15 | 27% | 0d |  |
| 17 |  | Создание мультимедиа – наполнения | 6w | 2022-04-07 16:00 A | 2022-05-25 15:43 | 3 | 52% | 61.33d |  |
| 18 |  | Создание справочной системы | 2w | 2022-07-20 08:00 | 2022-08-09 14:12 | 7 |  | 8.52d |  |
| 19 | 7 | **Создание руководства пользователя** | 20.19d | 2022-06-23 08:33 | 2022-07-21 10:03 | 7FS-10d |  | 0d |  |
| 20 |  | Разработка дизайна руководства | 1w | 2022-06-23 08:33 | 2022-06-30 14:53 |  |  | 0d |  |
| 21 |  | Написание руководства пользователя | 3w | 2022-06-27 08:33 | 2022-07-21 10:03 | 20SS+2d |  | 0d |  |
| 22 | 8 | **Создание web–сайта и поддержка** | 28.2d | 2022-06-27 08:33 | 2022-08-04 10:10 |  |  | 0d |  |
| 23 |  | Разработка структуры сайта | 1d | 2022-06-27 08:33 | 2022-06-28 08:33 | 21SS |  | 0d |  |
| 24 |  | Разработка дизайна сайта | 1.47w | 2022-06-28 08:33 | 2022-07-08 15:36 | 23 |  | 0d |  |
| 25 |  | Наполнение сайта | 3w | 2022-07-08 15:36 | 2022-08-04 10:10 | 24 |  | 0d |  |
| 26 |  | Тестирование сайта | 3.73w | 2022-07-28 10:10 | 2022-08-22 09:20 | 22FS-1w |  | 0d |  |
| 27 |  | Сдача сайта в эксплуатацию | 0w | 2022-08-22 09:20 | 2022-08-22 09:20 | 26 |  | 0d |  |
| 28 | 11 | **Еженедельное совещание** | 109.12d | 2022-03-02 09:00 A | 2022-08-10 10:00 |  | 38% | 7.92d |  |
| 29 |  | Еженедельное совещание 1 | 1h | 2022-03-02 09:00 A | 2022-03-02 10:00 A |  | 100% |  | start no earlier than 2022-03-02 09:00 |
| 30 |  | Еженедельное совещание 2 | 1h | 2022-03-09 09:00 A | 2022-03-09 10:00 A |  | 100% |  | start no earlier than 2022-03-09 09:00 |
| 31 |  | Еженедельное совещание 3 | 1h | 2022-03-16 09:00 A | 2022-03-16 10:00 A |  | 100% |  | start no earlier than 2022-03-16 09:00 |
| 32 |  | Еженедельное совещание 4 | 1h | 2022-03-23 09:00 A | 2022-03-23 10:00 A |  | 100% |  | start no earlier than 2022-03-23 09:00 |
| 33 |  | Еженедельное совещание 5 | 1h | 2022-03-30 09:00 A | 2022-03-30 10:00 A |  | 100% |  | start no earlier than 2022-03-30 09:00 |
| 34 |  | Еженедельное совещание 6 | 1h | 2022-04-06 09:00 A | 2022-04-06 10:00 A |  | 100% |  | start no earlier than 2022-04-06 09:00 |
| 35 |  | Еженедельное совещание 7 | 1h | 2022-04-13 09:00 A | 2022-04-13 10:00 A |  | 100% |  | start no earlier than 2022-04-13 09:00 |
| 36 |  | Еженедельное совещание 8 | 1h | 2022-04-20 09:00 A | 2022-04-20 10:00 A |  | 100% |  | start no earlier than 2022-04-20 09:00 |
| 37 |  | Еженедельное совещание 9 | 1h | 2022-04-27 09:00 A | 2022-04-27 10:00 A |  | 100% |  | start no earlier than 2022-04-27 09:00 |
| 38 |  | Еженедельное совещание 10 | 1h | 2022-05-04 09:00 | 2022-05-04 10:00 |  |  | 74.92d | start no earlier than 2022-05-04 09:00 |
| 39 |  | Еженедельное совещание 11 | 1h | 2022-05-11 09:00 | 2022-05-11 10:00 |  |  | 71.92d | start no earlier than 2022-05-11 09:00 |
| 40 |  | Еженедельное совещание 12 | 1h | 2022-05-18 09:00 | 2022-05-18 10:00 |  |  | 66.92d | start no earlier than 2022-05-18 09:00 |
| 41 |  | Еженедельное совещание 13 | 1h | 2022-05-25 09:00 | 2022-05-25 10:00 |  |  | 61.92d | start no earlier than 2022-05-25 09:00 |
| 42 |  | Еженедельное совещание 14 | 1h | 2022-06-01 09:00 | 2022-06-01 10:00 |  |  | 56.92d | start no earlier than 2022-06-01 09:00 |
| 43 |  | Еженедельное совещание 15 | 1h | 2022-06-08 09:00 | 2022-06-08 10:00 |  |  | 51.92d | start no earlier than 2022-06-08 09:00 |
| 44 |  | Еженедельное совещание 16 | 1h | 2022-06-15 09:00 | 2022-06-15 10:00 |  |  | 47.92d | start no earlier than 2022-06-15 09:00 |
| 45 |  | Еженедельное совещание 17 | 1h | 2022-06-22 09:00 | 2022-06-22 10:00 |  |  | 42.92d | start no earlier than 2022-06-22 09:00 |
| 46 |  | Еженедельное совещание 18 | 1h | 2022-06-29 09:00 | 2022-06-29 10:00 |  |  | 37.92d | start no earlier than 2022-06-29 09:00 |
| 47 |  | Еженедельное совещание 19 | 1h | 2022-07-06 09:00 | 2022-07-06 10:00 |  |  | 32.92d | start no earlier than 2022-07-06 09:00 |
| 48 |  | Еженедельное совещание 20 | 1h | 2022-07-13 09:00 | 2022-07-13 10:00 |  |  | 27.92d | start no earlier than 2022-07-13 09:00 |
| 49 |  | Еженедельное совещание 21 | 1h | 2022-07-20 09:00 | 2022-07-20 10:00 |  |  | 22.92d | start no earlier than 2022-07-20 09:00 |
| 50 |  | Еженедельное совещание 22 | 1h | 2022-07-27 09:00 | 2022-07-27 10:00 |  |  | 17.92d | start no earlier than 2022-07-27 09:00 |
| 51 |  | Еженедельное совещание 23 | 1h | 2022-08-03 09:00 | 2022-08-03 10:00 |  |  | 12.92d | start no earlier than 2022-08-03 09:00 |
| 52 |  | Еженедельное совещание 24 | 1h | 2022-08-10 09:00 | 2022-08-10 10:00 |  |  | 7.92d | start no earlier than 2022-08-10 09:00 |

## Version 2 (data date 2022-04-30, saved 2022-05-12, file Lab4_baseline.mpp)

Note of the change: Add EPI

Last finish 2022-08-22 → 2022-08-24 (+2d).

Changed:

| ID | Task | Start | Finish | Duration | Complete | Total float | Other |
| --- | --- | --- | --- | --- | --- | --- | --- |
| 1 | Начало проекта |  |  |  |  |  | baseline start none → 2022-03-01 09:00; baseline finish none → 2022-03-01 09:00 |
| 2 | **Разработка дизайна интерфейса** |  | 2022-07-07 08:33 → 2022-07-22 16:23 (+15d) | 85.94d → 97.8d |  |  | baseline start none → 2022-03-01 09:00; baseline finish none → 2022-06-30 08:42 |
| 3 | **Создание интерфейса** |  |  |  |  |  | baseline start none → 2022-03-01 09:00; baseline finish none → 2022-04-07 16:00 |
| 4 | Разработка 2D графических элементов |  |  |  |  |  | baseline start none → 2022-03-01 09:00; baseline finish none → 2022-03-24 14:45 |
| 5 | Разработка 3D графических элементов |  |  |  |  |  | baseline start none → 2022-03-01 09:00; baseline finish none → 2022-03-17 12:00 |
| 6 | Создание заставки |  |  |  |  |  | baseline start none → 2022-03-17 13:00; baseline finish none → 2022-04-07 16:00 |
| 7 | Программирование интерфейса | 2022-06-24 09:33 → 2022-07-11 17:23 (+17d) | 2022-07-07 08:33 → 2022-07-22 16:23 (+15d) |  |  |  | constraint none → start no earlier than 2022-06-06 09:00; baseline start none → 2022-06-20 13:42; baseline finish none → 2022-06-30 08:42 |
| 8 | **Построение базы объектов** |  |  |  |  | 16.16d → 18.41d | baseline start none → 2022-03-24 14:36; baseline finish none → 2022-07-29 09:05 |
| 9 | Анализ и построение структуры базы объектов |  |  |  |  |  | baseline start none → 2022-03-24 14:36; baseline finish none → 2022-04-07 17:00 |
| 10 | Программирование средств обработки базы объектов |  |  |  |  | 16.16d → 18.41d | baseline start none → 2022-04-11 09:05; baseline finish none → 2022-05-03 09:05 |
| 11 | Наполнение базы объектов |  |  |  |  | 16.16d → 18.41d | baseline start none → 2022-05-03 09:05; baseline finish none → 2022-07-29 09:05 |
| 12 | **Создание ядра GIS** |  | 2022-06-24 09:33 → 2022-07-11 17:23 (+17d) | 77.07d → 88.88d | 51% → 50% |  | baseline start none → 2022-03-01 09:00; baseline finish none → 2022-06-20 13:42 |
| 13 | Анализ и проектирование ядра |  |  |  |  |  | baseline start none → 2022-03-01 09:00; baseline finish none → 2022-03-24 15:00 |
| 14 | Создание модели ядра |  |  |  |  |  | baseline start none → 2022-03-24 15:00; baseline finish none → 2022-04-07 16:05 |
| 15 | Тестирование модели ядра |  |  |  |  |  | baseline start none → 2022-04-07 16:05; baseline finish none → 2022-04-11 09:05 |
| 16 | Создание рабочей версии ядра |  | 2022-06-24 09:33 → 2022-07-11 17:23 (+17d) | 10.94w → 11.24w | 27% → 26% |  | baseline start none → 2022-04-11 09:05; baseline finish none → 2022-06-20 13:42 |
| 17 | Создание мультимедиа – наполнения |  |  |  |  | 61.33d → 63.58d | baseline start none → 2022-04-07 16:00; baseline finish none → 2022-05-25 15:43 |
| 18 | Создание справочной системы | 2022-07-20 08:00 → 2022-08-04 08:00 (+15d) | 2022-08-09 14:12 → 2022-08-24 11:23 (+15d) |  |  | 8.52d → 0d | baseline start none → 2022-07-13 08:00; baseline finish none → 2022-08-01 16:04 |
| 19 | **Создание руководства пользователя** | 2022-06-23 08:33 → 2022-07-08 16:23 (+15d) | 2022-07-21 10:03 → 2022-08-08 10:53 (+18d) | 20.19d → 20.44d |  | 0d → 1.67d | baseline start none → 2022-06-16 08:42; baseline finish none → 2022-07-14 10:12 |
| 20 | Разработка дизайна руководства | 2022-06-23 08:33 → 2022-07-08 16:23 (+15d) | 2022-06-30 14:53 → 2022-07-18 14:43 (+18d) |  |  | 0d → 1.67d | baseline start none → 2022-06-16 08:42; baseline finish none → 2022-06-23 15:02 |
| 21 | Написание руководства пользователя | 2022-06-27 08:33 → 2022-07-12 16:23 (+15d) | 2022-07-21 10:03 → 2022-08-08 10:53 (+18d) |  |  | 0d → 1.67d | baseline start none → 2022-06-20 08:42; baseline finish none → 2022-07-14 10:12 |
| 22 | **Создание web–сайта и поддержка** | 2022-06-27 08:33 → 2022-07-12 16:23 (+15d) | 2022-08-04 10:10 → 2022-08-22 15:00 (+18d) | 28.2d → 28.83d |  | 0d → 1.67d | baseline start none → 2022-06-20 08:42; baseline finish none → 2022-07-28 10:20 |
| 23 | Разработка структуры сайта | 2022-06-27 08:33 → 2022-07-12 16:23 (+15d) | 2022-06-28 08:33 → 2022-07-14 08:23 (+16d) |  |  | 0d → 1.67d | baseline start none → 2022-06-20 08:42; baseline finish none → 2022-06-21 08:42 |
| 24 | Разработка дизайна сайта | 2022-06-28 08:33 → 2022-07-14 08:23 (+16d) | 2022-07-08 15:36 → 2022-07-26 16:26 (+18d) |  |  | 0d → 1.67d | baseline start none → 2022-06-21 08:42; baseline finish none → 2022-07-01 15:45 |
| 25 | Наполнение сайта | 2022-07-08 15:36 → 2022-07-26 16:26 (+18d) | 2022-08-04 10:10 → 2022-08-22 15:00 (+18d) |  |  | 0d → 1.67d | baseline start none → 2022-07-01 15:45; baseline finish none → 2022-07-28 10:20 |
| 26 | Тестирование сайта | 2022-07-28 10:10 → 2022-03-17 16:37 A (-133d) | 2022-08-22 09:20 → 2022-05-23 10:50 (-91d) | 3.73w → 5.59w | 0% → 52% | 0d → 66.07d | constraint none → start no earlier than 2022-03-17 16:37; baseline start none → 2022-07-21 10:20; baseline finish none → 2022-08-10 14:36 |
| 27 | Сдача сайта в эксплуатацию | 2022-08-22 09:20 → 2022-05-23 10:50 (-91d) | 2022-08-22 09:20 → 2022-05-23 10:50 (-91d) |  |  | 0d → 66.07d | baseline start none → 2022-08-10 14:36; baseline finish none → 2022-08-10 14:36 |
| 28 | **Еженедельное совещание** |  |  |  |  | 7.92d → 10.17d | baseline start none → 2022-03-02 09:00; baseline finish none → 2022-08-10 10:00 |
| 29 | Еженедельное совещание 1 |  |  |  |  |  | baseline start none → 2022-03-02 09:00; baseline finish none → 2022-03-02 10:00 |
| 30 | Еженедельное совещание 2 |  |  |  |  |  | baseline start none → 2022-03-09 09:00; baseline finish none → 2022-03-09 10:00 |
| 31 | Еженедельное совещание 3 |  |  |  |  |  | baseline start none → 2022-03-16 09:00; baseline finish none → 2022-03-16 10:00 |
| 32 | Еженедельное совещание 4 |  |  |  |  |  | baseline start none → 2022-03-23 09:00; baseline finish none → 2022-03-23 10:00 |
| 33 | Еженедельное совещание 5 |  |  |  |  |  | baseline start none → 2022-03-30 09:00; baseline finish none → 2022-03-30 10:00 |
| 34 | Еженедельное совещание 6 |  |  |  |  |  | baseline start none → 2022-04-06 09:00; baseline finish none → 2022-04-06 10:00 |
| 35 | Еженедельное совещание 7 |  |  |  |  |  | baseline start none → 2022-04-13 09:00; baseline finish none → 2022-04-13 10:00 |
| 36 | Еженедельное совещание 8 |  |  |  |  |  | baseline start none → 2022-04-20 09:00; baseline finish none → 2022-04-20 10:00 |
| 37 | Еженедельное совещание 9 |  |  |  |  |  | baseline start none → 2022-04-27 09:00; baseline finish none → 2022-04-27 10:00 |
| 38 | Еженедельное совещание 10 |  |  |  |  | 74.92d → 77.17d | baseline start none → 2022-05-04 09:00; baseline finish none → 2022-05-04 10:00 |
| 39 | Еженедельное совещание 11 |  |  |  |  | 71.92d → 74.17d | baseline start none → 2022-05-11 09:00; baseline finish none → 2022-05-11 10:00 |
| 40 | Еженедельное совещание 12 |  |  |  |  | 66.92d → 69.17d | baseline start none → 2022-05-18 09:00; baseline finish none → 2022-05-18 10:00 |
| 41 | Еженедельное совещание 13 |  |  |  |  | 61.92d → 64.17d | baseline start none → 2022-05-25 09:00; baseline finish none → 2022-05-25 10:00 |
| 42 | Еженедельное совещание 14 |  |  |  |  | 56.92d → 59.17d | baseline start none → 2022-06-01 09:00; baseline finish none → 2022-06-01 10:00 |
| 43 | Еженедельное совещание 15 |  |  |  |  | 51.92d → 54.17d | baseline start none → 2022-06-08 09:00; baseline finish none → 2022-06-08 10:00 |
| 44 | Еженедельное совещание 16 |  |  |  |  | 47.92d → 50.17d | baseline start none → 2022-06-15 09:00; baseline finish none → 2022-06-15 10:00 |
| 45 | Еженедельное совещание 17 |  |  |  |  | 42.92d → 45.17d | baseline start none → 2022-06-22 09:00; baseline finish none → 2022-06-22 10:00 |
| 46 | Еженедельное совещание 18 |  |  |  |  | 37.92d → 40.17d | baseline start none → 2022-06-29 09:00; baseline finish none → 2022-06-29 10:00 |
| 47 | Еженедельное совещание 19 |  |  |  |  | 32.92d → 35.17d | baseline start none → 2022-07-06 09:00; baseline finish none → 2022-07-06 10:00 |
| 48 | Еженедельное совещание 20 |  |  |  |  | 27.92d → 30.17d | baseline start none → 2022-07-13 09:00; baseline finish none → 2022-07-13 10:00 |
| 49 | Еженедельное совещание 21 |  |  |  |  | 22.92d → 25.17d | baseline start none → 2022-07-20 09:00; baseline finish none → 2022-07-20 10:00 |
| 50 | Еженедельное совещание 22 |  |  |  |  | 17.92d → 20.17d | baseline start none → 2022-07-27 09:00; baseline finish none → 2022-07-27 10:00 |
| 51 | Еженедельное совещание 23 |  |  |  |  | 12.92d → 15.17d | baseline start none → 2022-08-03 09:00; baseline finish none → 2022-08-03 10:00 |
| 52 | Еженедельное совещание 24 |  |  |  |  | 7.92d → 10.17d | baseline start none → 2022-08-10 09:00; baseline finish none → 2022-08-10 10:00 |
