# Lab5_1

How a schedule from MS Project changed from version to version. A marks actual dates.

## Version 1 (data date 2022-04-30, saved 2022-07-20, file Lab5_1.mpp)

Note of the change: Add EPI

| ID | WBS | Task | Duration | Start | Finish | Predecessors | Complete | Total float | Constraint |
| --- | --- | --- | --- | --- | --- | --- | --- | --- | --- |
| 1 |  | Начало проекта | 0w | 2022-03-01 09:00 A | 2022-03-01 09:00 A |  | 100% |  |  |
| 2 | 2 | **Разработка дизайна интерфейса** | 97.8d | 2022-03-01 09:00 A | 2022-07-22 16:23 | 1 | 83% | 0d |  |
| 3 | 2.1 | **Создание интерфейса** | 25.75d | 2022-03-01 09:00 A | 2022-04-07 16:00 A |  | 100% |  |  |
| 4 |  | Разработка 2D графических элементов | 3w | 2022-03-01 09:00 A | 2022-03-24 14:45 A |  | 100% |  |  |
| 5 |  | Разработка 3D графических элементов | 3.7w | 2022-03-01 09:00 A | 2022-03-29 17:00 A | 4SS | 100% |  |  |
| 6 |  | Создание заставки | 3w | 2022-03-17 13:00 A | 2022-04-07 16:00 A | 5 | 100% |  |  |
| 7 |  | Программирование интерфейса | 2w | 2022-07-11 17:23 | 2022-07-22 16:23 | 3, 12 |  | 0d | start no earlier than 2022-06-06 09:00 |
| 8 | 3 | **Построение базы объектов** | 86.31d | 2022-03-24 14:36 A | 2022-07-29 08:05 |  | 29% | 18.41d |  |
| 9 |  | Анализ и построение структуры базы объектов | 2w | 2022-03-24 14:36 A | 2022-04-07 17:00 A |  | 100% |  |  |
| 10 |  | Программирование средств обработки базы объектов | 3w | 2022-04-11 09:05 A | 2022-05-03 08:05 | 9 | 99% | 18.41d |  |
| 11 |  | Наполнение базы объектов | 12w | 2022-05-03 08:05 | 2022-07-29 08:05 | 10 |  | 18.41d |  |
| 12 | 4 | **Создание ядра GIS** | 88.88d | 2022-03-01 09:00 A | 2022-07-11 17:23 |  | 50% | 0d |  |
| 13 |  | Анализ и проектирование ядра | 3.01w | 2022-03-01 09:00 A | 2022-03-24 15:00 A |  | 100% |  |  |
| 14 |  | Создание модели ядра | 2.03w | 2022-03-24 15:00 A | 2022-04-07 16:05 A | 13 | 100% |  |  |
| 15 |  | Тестирование модели ядра | 0.25w | 2022-04-07 16:05 A | 2022-04-11 09:05 A | 14 | 100% |  |  |
| 16 |  | Создание рабочей версии ядра | 11.24w | 2022-04-11 09:05 A | 2022-07-11 17:23 | 15 | 26% | 0d |  |
| 17 |  | Создание мультимедиа – наполнения | 6w | 2022-04-07 16:00 A | 2022-05-25 15:43 | 3 | 52% | 63.58d |  |
| 18 |  | Создание справочной системы | 2w | 2022-08-04 08:00 | 2022-08-24 11:23 | 7 |  | 0d |  |
| 19 | 7 | **Создание руководства пользователя** | 20.44d | 2022-07-08 16:23 | 2022-08-08 10:53 | 7FS-10d |  | 1.67d |  |
| 20 |  | Разработка дизайна руководства | 1w | 2022-07-08 16:23 | 2022-07-18 14:43 |  |  | 1.67d |  |
| 21 |  | Написание руководства пользователя | 3w | 2022-07-12 16:23 | 2022-08-08 10:53 | 20SS+2d |  | 1.67d |  |
| 22 | 8 | **Создание web–сайта и поддержка** | 28.83d | 2022-07-12 16:23 | 2022-08-22 15:00 |  |  | 1.67d |  |
| 23 |  | Разработка структуры сайта | 1d | 2022-07-12 16:23 | 2022-07-14 08:23 | 21SS |  | 1.67d |  |
| 24 |  | Разработка дизайна сайта | 1.47w | 2022-07-14 08:23 | 2022-07-26 16:26 | 23 |  | 1.67d |  |
| 25 |  | Наполнение сайта | 3w | 2022-07-26 16:26 | 2022-08-22 15:00 | 24 |  | 1.67d |  |
| 26 |  | Тестирование сайта | 5.59w | 2022-03-17 16:37 A | 2022-05-23 10:50 | 22FS-1w | 39% | 66.07d | start no earlier than 2022-03-17 16:37 |
| 27 |  | Сдача сайта в эксплуатацию | 0w | 2022-05-23 10:50 | 2022-05-23 10:50 | 26 |  | 66.07d |  |
| 28 | 11 | **Еженедельное совещание** | 109.12d | 2022-03-02 09:00 A | 2022-08-10 10:00 |  | 38% | 10.17d |  |
| 29 |  | Еженедельное совещание 1 | 1h | 2022-03-02 09:00 A | 2022-03-02 10:00 A |  | 100% |  | start no earlier than 2022-03-02 09:00 |
| 30 |  | Еженедельное совещание 2 | 1h | 2022-03-09 09:00 A | 2022-03-09 10:00 A |  | 100% |  | start no earlier than 2022-03-09 09:00 |
| 31 |  | Еженедельное совещание 3 | 1h | 2022-03-16 09:00 A | 2022-03-16 10:00 A |  | 100% |  | start no earlier than 2022-03-16 09:00 |
| 32 |  | Еженедельное совещание 4 | 1h | 2022-03-23 09:00 A | 2022-03-23 10:00 A |  | 100% |  | start no earlier than 2022-03-23 09:00 |
| 33 |  | Еженедельное совещание 5 | 1h | 2022-03-30 09:00 A | 2022-03-30 10:00 A |  | 100% |  | start no earlier than 2022-03-30 09:00 |
| 34 |  | Еженедельное совещание 6 | 1h | 2022-04-06 09:00 A | 2022-04-06 10:00 A |  | 100% |  | start no earlier than 2022-04-06 09:00 |
| 35 |  | Еженедельное совещание 7 | 1h | 2022-04-13 09:00 A | 2022-04-13 10:00 A |  | 100% |  | start no earlier than 2022-04-13 09:00 |
| 36 |  | Еженедельное совещание 8 | 1h | 2022-04-20 09:00 A | 2022-04-20 10:00 A |  | 100% |  | start no earlier than 2022-04-20 09:00 |
| 37 |  | Еженедельное совещание 9 | 1h | 2022-04-27 09:00 A | 2022-04-27 10:00 A |  | 100% |  | start no earlier than 2022-04-27 09:00 |
| 38 |  | Еженедельное совещание 10 | 1h | 2022-05-04 09:00 | 2022-05-04 10:00 |  |  | 77.17d | start no earlier than 2022-05-04 09:00 |
| 39 |  | Еженедельное совещание 11 | 1h | 2022-05-11 09:00 | 2022-05-11 10:00 |  |  | 74.17d | start no earlier than 2022-05-11 09:00 |
| 40 |  | Еженедельное совещание 12 | 1h | 2022-05-18 09:00 | 2022-05-18 10:00 |  |  | 69.17d | start no earlier than 2022-05-18 09:00 |
| 41 |  | Еженедельное совещание 13 | 1h | 2022-05-25 09:00 | 2022-05-25 10:00 |  |  | 64.17d | start no earlier than 2022-05-25 09:00 |
| 42 |  | Еженедельное совещание 14 | 1h | 2022-06-01 09:00 | 2022-06-01 10:00 |  |  | 59.17d | start no earlier than 2022-06-01 09:00 |
| 43 |  | Еженедельное совещание 15 | 1h | 2022-06-08 09:00 | 2022-06-08 10:00 |  |  | 54.17d | start no earlier than 2022-06-08 09:00 |
| 44 |  | Еженедельное совещание 16 | 1h | 2022-06-15 09:00 | 2022-06-15 10:00 |  |  | 50.17d | start no earlier than 2022-06-15 09:00 |
| 45 |  | Еженедельное совещание 17 | 1h | 2022-06-22 09:00 | 2022-06-22 10:00 |  |  | 45.17d | start no earlier than 2022-06-22 09:00 |
| 46 |  | Еженедельное совещание 18 | 1h | 2022-06-29 09:00 | 2022-06-29 10:00 |  |  | 40.17d | start no earlier than 2022-06-29 09:00 |
| 47 |  | Еженедельное совещание 19 | 1h | 2022-07-06 09:00 | 2022-07-06 10:00 |  |  | 35.17d | start no earlier than 2022-07-06 09:00 |
| 48 |  | Еженедельное совещание 20 | 1h | 2022-07-13 09:00 | 2022-07-13 10:00 |  |  | 30.17d | start no earlier than 2022-07-13 09:00 |
| 49 |  | Еженедельное совещание 21 | 1h | 2022-07-20 09:00 | 2022-07-20 10:00 |  |  | 25.17d | start no earlier than 2022-07-20 09:00 |
| 50 |  | Еженедельное совещание 22 | 1h | 2022-07-27 09:00 | 2022-07-27 10:00 |  |  | 20.17d | start no earlier than 2022-07-27 09:00 |
| 51 |  | Еженедельное совещание 23 | 1h | 2022-08-03 09:00 | 2022-08-03 10:00 |  |  | 15.17d | start no earlier than 2022-08-03 09:00 |
| 52 |  | Еженедельное совещание 24 | 1h | 2022-08-10 09:00 | 2022-08-10 10:00 |  |  | 10.17d | start no earlier than 2022-08-10 09:00 |

## Version 2 (saved 2022-07-20, file Lab5_3.mpp)

Note of the change: Add EPI

Last finish 2022-08-24 → 2022-08-25 (+1d). Complete tasks 17 → 0.

Added:

| ID | Task | Duration | Start | Finish |
| --- | --- | --- | --- | --- |
| 2 | **Разработка** | 108.06d | 2022-03-01 09:00 | 2022-08-08 09:30 |
| 19 | **Дизайн** | 84.43d | 2022-03-09 10:45 | 2022-07-11 15:12 |
| 24 | **Анализ** | 26.12d | 2022-03-01 09:00 | 2022-04-08 10:00 |
| 27 | **Документация** | 113.91d | 2022-03-11 10:45 | 2022-08-24 10:00 |
| 31 | **Тестирование** | 77.27d | 2022-05-05 10:56 | 2022-08-25 14:05 |

Changed:

| ID | Task | Start | Finish | Duration | Complete | Total float | Predecessors | Other |
| --- | --- | --- | --- | --- | --- | --- | --- | --- |
| 1 | Начало проекта | 2022-03-01 09:00 A → 2022-03-01 09:00 | 2022-03-01 09:00 A → 2022-03-01 09:00 |  | 100% → 0% | none → 37.59d |  |  |
| 3 | **Построение базы объектов** | 2022-03-24 14:36 A → 2022-04-11 11:05 (+18d) | 2022-07-29 08:05 → 2022-04-28 16:29 (-92d) | 86.31d → 13.55d | 29% → 0% | 18.41d → 20.7d | none → 10 | resources Дополнительный сервер; Server → Дополнительный сервер |
| 4 | Программирование средств обработки базы объектов | 2022-04-11 09:05 A → 2022-04-11 11:05 | 2022-05-03 08:05 → 2022-04-28 16:29 (-5d) | 3w → 2.71w | 99% → 0% | 18.41d → 20.7d |  | resources Программист#3; Программист#4 → Программист#3; Программист#4; Программист#1; Программист#2 |
| 5 | Наполнение базы объектов | 2022-05-03 08:05 → 2022-04-28 16:29 (-5d) | 2022-07-29 08:05 → 2022-07-27 16:29 (-2d) |  |  | 18.41d → 20.7d | 4 → 4, 26 |  |
| 6 | Сдача сайта в эксплуатацию | 2022-05-23 10:50 → 2022-07-11 15:12 (+49d) | 2022-05-23 10:50 → 2022-07-11 15:12 (+49d) |  |  | 66.07d → 32.86d | 32 → 19 |  |
| 7 | **Создание интерфейса** | 2022-03-01 09:00 A → 2022-03-01 09:00 | 2022-04-07 16:00 A → 2022-05-26 09:29 (+49d) | 25.75d → 57.06d | 100% → 0% | none → 32.86d |  |  |
| 8 | **Разработка дизайна интерфейса** | 2022-03-01 09:00 A → 2022-03-01 09:00 | 2022-07-22 16:23 → 2022-05-26 09:29 (-57d) | 97.8d → 57.06d | 83% → 0% | 0d → 32.86d |  |  |
| 9 | Разработка 2D графических элементов | 2022-03-01 09:00 A → 2022-03-01 09:00 | 2022-03-24 14:45 A → 2022-03-24 14:45 |  | 100% → 0% | none → 37.59d |  |  |
| 10 | Разработка 3D графических элементов | 2022-03-01 09:00 A → 2022-03-01 09:00 | 2022-03-29 17:00 A → 2022-03-17 12:00 (-12d) | 3.7w → 2w | 100% → 0% | none → 37.59d |  |  |
| 11 | Создание заставки | 2022-03-17 13:00 A → 2022-04-28 16:29 (+42d) | 2022-04-07 16:00 A → 2022-05-26 09:29 (+49d) |  | 100% → 0% | none → 32.86d | 10 → 3 |  |
| 12 | Программирование интерфейса | 2022-07-11 17:23 → 2022-07-27 14:30 (+16d) | 2022-07-22 16:23 → 2022-08-08 09:30 (+17d) | 2w → 1.5w |  | 0d → 3.45d | 7, 15 → 15 | constraint start no earlier than 2022-06-06 09:00 → none |
| 13 | **Создание web–сайта и поддержка** | 2022-07-12 16:23 → 2022-04-14 10:14 (-89d) | 2022-08-22 15:00 → 2022-05-13 14:48 (-101d) | 28.83d → 18.45d |  | 1.67d → 0.64d |  |  |
| 14 | Наполнение сайта | 2022-07-26 16:26 → 2022-04-14 10:14 (-103d) | 2022-08-22 15:00 → 2022-05-13 14:48 (-101d) |  |  | 1.67d → 0.64d | 22 → 22, 23 |  |
| 15 | **Создание ядра GIS** | 2022-03-01 09:00 A → 2022-03-24 15:00 (+23d) | 2022-07-11 17:23 → 2022-07-27 14:30 (+16d) | 88.88d → 84.94d | 50% → 0% | 0d → 3.45d |  |  |
| 16 | Создание модели ядра | 2022-03-24 15:00 A → 2022-03-24 15:00 | 2022-04-07 16:05 A → 2022-04-07 16:05 |  | 100% → 0% | none → 3.45d |  |  |
| 17 | Тестирование модели ядра | 2022-04-07 16:05 A → 2022-04-07 16:05 | 2022-04-11 09:05 A → 2022-04-11 09:05 |  | 100% → 0% | none → 3.45d | 16 → 16, 25 |  |
| 18 | Создание рабочей версии ядра | 2022-04-11 09:05 A → 2022-04-11 09:05 | 2022-07-11 17:23 → 2022-07-27 14:30 (+16d) | 11.24w → 14.51w | 26% → 0% | 0d → 3.45d | 17 → 17, 25 |  |
| 20 | Создание мультимедиа – наполнения | 2022-04-07 16:00 A → 2022-05-26 09:29 (+49d) | 2022-05-25 15:43 → 2022-07-11 15:12 (+47d) |  | 52% → 0% | 63.58d → 32.86d |  |  |
| 21 | Разработка дизайна руководства | 2022-07-08 16:23 → 2022-03-09 10:45 (-121d) | 2022-07-18 14:43 → 2022-04-01 13:10 (-108d) | 1w → 0.9w |  | 1.67d → 0.64d |  |  |
| 22 | Разработка дизайна сайта | 2022-07-14 08:23 → 2022-04-01 13:10 (-104d) | 2022-07-26 16:26 → 2022-04-14 10:14 (-103d) | 1.47w → 1.6w |  | 1.67d → 0.64d | 23 → 23, 21 |  |
| 23 | Разработка структуры сайта | 2022-07-12 16:23 → 2022-03-11 10:45 (-123d) | 2022-07-14 08:23 → 2022-03-14 10:45 (-122d) |  |  | 1.67d → 14.82d |  |  |
| 25 | Анализ и проектирование ядра | 2022-03-01 09:00 A → 2022-03-01 09:00 | 2022-03-24 15:00 A → 2022-03-24 15:00 |  | 100% → 0% | none → 3.45d |  |  |
| 26 | Анализ и построение структуры базы объектов | 2022-03-24 14:36 A → 2022-03-24 14:36 | 2022-04-07 17:00 A → 2022-04-08 10:00 (+1d) |  | 100% → 0% | none → 19.75d |  |  |
| 28 | Написание руководства пользователя | 2022-07-12 16:23 → 2022-03-11 10:45 (-123d) | 2022-08-08 10:53 → 2022-04-06 14:15 (-124d) |  |  | 1.67d → 14.82d |  |  |
| 29 | Создание справочной системы | 2022-08-04 08:00 → 2022-08-10 10:00 (+6d) | 2022-08-24 11:23 → 2022-08-24 10:00 | 2w → 1.94w |  | 0d → 1.39d |  | constraint none → start no earlier than 2022-08-10 10:00 |
| 30 | Создание руководства пользователя | 2022-07-08 16:23 → 2022-07-25 09:30 (+17d) | 2022-08-08 10:53 → 2022-07-26 09:30 (-13d) | 20.44d → 1d |  | 1.67d → 22.45d |  |  |
| 32 | Тестирование сайта | 2022-03-17 16:37 A → 2022-05-05 10:56 (+49d) | 2022-05-23 10:50 → 2022-08-25 14:05 (+94d) | 5.59w → 5.44w | 39% → 0% | 66.07d → 0d |  | constraint start no earlier than 2022-03-17 16:37 → start no earlier than 2022-05-05 10:56 |
| 33 | **Еженедельное совещание** | 2022-03-02 09:00 A → 2022-03-02 09:00 |  |  | 38% → 0% | 10.17d → 11.39d |  |  |
| 34 | Еженедельное совещание 1 | 2022-03-02 09:00 A → 2022-03-02 09:00 | 2022-03-02 10:00 A → 2022-03-02 10:00 |  | 100% → 0% | none → 120.39d |  |  |
| 35 | Еженедельное совещание 2 | 2022-03-09 09:00 A → 2022-03-09 09:00 | 2022-03-09 10:00 A → 2022-03-09 10:00 |  | 100% → 0% | none → 117.39d |  |  |
| 36 | Еженедельное совещание 3 | 2022-03-16 09:00 A → 2022-03-16 09:00 | 2022-03-16 10:00 A → 2022-03-16 10:00 |  | 100% → 0% | none → 112.39d |  |  |
| 37 | Еженедельное совещание 4 | 2022-03-23 09:00 A → 2022-03-23 09:00 | 2022-03-23 10:00 A → 2022-03-23 10:00 |  | 100% → 0% | none → 107.39d |  |  |
| 38 | Еженедельное совещание 5 | 2022-03-30 09:00 A → 2022-03-30 09:00 | 2022-03-30 10:00 A → 2022-03-30 10:00 |  | 100% → 0% | none → 102.39d |  |  |
| 39 | Еженедельное совещание 6 | 2022-04-06 09:00 A → 2022-04-06 09:00 | 2022-04-06 10:00 A → 2022-04-06 10:00 |  | 100% → 0% | none → 97.39d |  |  |
| 40 | Еженедельное совещание 7 | 2022-04-13 09:00 A → 2022-04-13 09:00 | 2022-04-13 10:00 A → 2022-04-13 10:00 |  | 100% → 0% | none → 92.39d |  |  |
| 41 | Еженедельное совещание 8 | 2022-04-20 09:00 A → 2022-04-20 09:00 | 2022-04-20 10:00 A → 2022-04-20 10:00 |  | 100% → 0% | none → 87.39d |  |  |
| 42 | Еженедельное совещание 9 | 2022-04-27 09:00 A → 2022-04-27 09:00 | 2022-04-27 10:00 A → 2022-04-27 10:00 |  | 100% → 0% | none → 82.39d |  |  |
