# rk-variant2-8

How a schedule from MS Project changed from version to version. A marks actual dates.

## Version 1 (data date 2022-04-12, saved 2022-04-19, file rk-variant2-7.mpp)

Note of the change: Add EPI

| ID | WBS | Task | Duration | Start | Finish | Predecessors | Total float |
| --- | --- | --- | --- | --- | --- | --- | --- |
| 1 |  | Начало проекта | 0d | 2022-04-04 | 2022-04-04 |  | 0d |
| 2 | 2 | **Программирование** | 42d | 2022-04-05 | 2022-06-08 |  | 0d |
| 3 |  | Постановка задачи | 5d | 2022-04-05 | 2022-04-11 | 1FS+1d | 0d |
| 4 |  | Разработка интерфейса | 10d | 2022-04-12 | 2022-04-25 | 3 | 7d |
| 5 |  | Разработка модулей обработки данных | 20d | 2022-04-26 | 2022-05-27 | 4 | 7d |
| 6 |  | Разработка базы данных | 25d | 2022-04-12 | 2022-05-20 | 3 | 0d |
| 7 |  | Заполнение базы данных | 12d | 2022-05-20 | 2022-06-08 | 6 | 0d |
| 8 |  | Программирование завершено | 0d | 2022-06-08 | 2022-06-08 | 5, 7 | 0d |
| 9 | 4 | **Тестирование и отладка** | 20d | 2022-05-31 | 2022-06-30 |  | 20d |
| 10 |  | Подготовка тестовых наборов данных | 5d | 2022-05-31 | 2022-06-08 | 8FS-5d | 20d |
| 11 |  | Тестирование и исправление ошибок | 15d | 2022-06-08 | 2022-06-30 | 10 | 20d |
| 12 |  | Отладка завершена | 0d | 2022-06-30 | 2022-06-30 | 11 | 20d |
| 13 | 6 | **Разработка документации** | 25d | 2022-06-23 | 2022-07-29 |  | 0d |
| 14 |  | Составление программной документации | 10d | 2022-06-23 | 2022-07-07 | 8SS+10d | 0d |
| 15 |  | Составление пользовательской документации | 15d | 2022-07-07 | 2022-07-29 | 14 | 0d |
| 16 |  | Конец проекта | 0d | 2022-07-29 | 2022-07-29 | 15 | 0d |

## Version 2 (data date 2022-06-06, saved 2022-04-19, file rk-variant2-10.mpp)

Note of the change: Add EPI

Last finish 2022-07-29 → 2022-08-03 (+5d). Complete tasks 0 → 9.

Added:

| ID | Task | Duration | Start | Finish | Constraint | Resources |
| --- | --- | --- | --- | --- | --- | --- |
| 17 | **Профилактика оборудования** | 54.5d | 2022-04-26 12:00 A | 2022-07-19 16:00 |  |  |
| 18 | Профилактика оборудования 1 | 3h | 2022-04-26 12:00 A | 2022-04-26 16:00 A | start no earlier than 2022-04-26 09:00 | Специалист |
| 19 | Профилактика оборудования 2 | 3h | 2022-05-11 09:00 A | 2022-05-11 12:00 A | start no earlier than 2022-05-10 09:00 | Специалист |
| 20 | Профилактика оборудования 3 | 3h | 2022-05-24 12:00 A | 2022-05-24 16:00 A | start no earlier than 2022-05-24 09:00 | Специалист |
| 21 | Профилактика оборудования 4 | 3h | 2022-06-07 12:00 | 2022-06-07 16:00 | start no earlier than 2022-06-07 09:00 | Специалист |
| 22 | Профилактика оборудования 5 | 3h | 2022-06-21 12:00 | 2022-06-21 16:00 | start no earlier than 2022-06-21 09:00 | Специалист |
| 23 | Профилактика оборудования 6 | 3h | 2022-07-05 12:00 | 2022-07-05 16:00 | start no earlier than 2022-07-05 09:00 | Специалист |
| 24 | Профилактика оборудования 7 | 3h | 2022-07-19 12:00 | 2022-07-19 16:00 | start no earlier than 2022-07-19 09:00 | Специалист |

Changed:

| ID | Task | Start | Finish | Duration | Complete | Total float | Other |
| --- | --- | --- | --- | --- | --- | --- | --- |
| 1 | Начало проекта | 2022-04-04 → 2022-04-04 09:00 A | 2022-04-04 → 2022-04-04 09:00 A |  | 0% → 100% | 0d → none | baseline start none → 2022-04-04 09:00; baseline finish none → 2022-04-04 09:00 |
| 2 | **Программирование** | 2022-04-05 → 2022-04-05 09:00 A | 2022-06-08 → 2022-06-14 10:51 (+6d) | 42d → 45.11d | 0% → 94% |  | baseline start none → 2022-04-05 09:00; baseline finish none → 2022-05-31 12:08 |
| 3 | Постановка задачи | 2022-04-05 → 2022-04-05 09:00 A | 2022-04-11 → 2022-04-11 18:00 A |  | 0% → 100% | 0d → none | baseline start none → 2022-04-05 09:00; baseline finish none → 2022-04-11 18:00 |
| 4 | Разработка интерфейса | 2022-04-12 → 2022-04-12 09:00 A | 2022-04-25 → 2022-04-25 18:00 A |  | 0% → 100% | 7d → none | baseline start none → 2022-04-12 09:00; baseline finish none → 2022-04-25 18:00 |
| 5 | Разработка модулей обработки данных | 2022-04-26 → 2022-05-04 12:00 A (+8d) | 2022-05-27 → 2022-06-14 10:51 (+18d) | 20d → 20.11d | 0% → 81% | 7d → 0d | resources Программист 2; Программист 3 → Программист 2; Программист 3; Программист 1; baseline start none → 2022-05-04 12:00; baseline finish none → 2022-05-30 16:34 |
| 6 | Разработка базы данных | 2022-04-12 → 2022-04-12 09:00 A | 2022-05-20 → 2022-05-13 09:08 A (-7d) | 25d → 19.64d | 0% → 100% | 0d → none | resources Аналитик; Программист 1; Программист 2 → Аналитик; Программист 1; Программист 2; Программист 3; baseline start none → 2022-04-12 09:00; baseline finish none → 2022-05-13 09:08 |
| 7 | Заполнение базы данных | 2022-05-20 → 2022-05-13 09:08 A (-7d) | 2022-06-08 → 2022-05-23 09:08 A (-16d) | 12d → 6d | 0% → 100% | 0d → none | resources Наборщик данных → Наборщик данных [200%]; baseline start none → 2022-05-13 09:08; baseline finish none → 2022-05-31 12:08 |
| 8 | Программирование завершено | 2022-06-08 → 2022-06-14 10:51 (+6d) | 2022-06-08 → 2022-06-14 10:51 (+6d) |  |  |  | baseline start none → 2022-05-31 12:08; baseline finish none → 2022-05-31 12:08 |
| 9 | **Тестирование и отладка** | 2022-05-31 → 2022-05-23 12:34 A (-8d) | 2022-06-30 → 2022-06-28 16:00 (-2d) | 20d → 24.18d | 0% → 44% | 20d → 24.86d | baseline start none → 2022-05-24 12:08; baseline finish none → 2022-06-29 14:34 |
| 10 | Подготовка тестовых наборов данных | 2022-05-31 → 2022-05-23 12:34 A (-8d) | 2022-06-08 → 2022-06-02 18:00 A (-6d) | 5d → 8.18d | 0% → 100% | 20d → none | baseline start none → 2022-05-24 12:08; baseline finish none → 2022-06-06 16:34 |
| 11 | Тестирование и исправление ошибок | 2022-06-08 → 2022-06-03 09:00 A (-5d) | 2022-06-30 → 2022-06-28 16:00 (-2d) |  | 0% → 13% | 20d → 24.86d | baseline start none → 2022-06-06 16:34; baseline finish none → 2022-06-29 14:34 |
| 12 | Отладка завершена | 2022-06-30 → 2022-06-28 16:00 (-2d) | 2022-06-30 → 2022-06-28 16:00 (-2d) |  |  | 20d → 24.86d | baseline start none → 2022-06-29 14:34; baseline finish none → 2022-06-29 14:34 |
| 13 | **Разработка документации** | 2022-06-23 → 2022-06-28 14:51 (+5d) | 2022-07-29 → 2022-08-03 15:51 (+5d) |  |  |  | resources Картриджи для принтера [200%]; Бумага → Картриджи для принтера [0.01 шт]; Бумага [0.01 пач]; baseline start none → 2022-06-15 16:08; baseline finish none → 2022-07-21 17:08 |
| 14 | Составление программной документации | 2022-06-23 → 2022-06-28 14:51 (+5d) | 2022-07-07 → 2022-07-12 17:51 (+5d) |  |  |  | baseline start none → 2022-06-15 16:08; baseline finish none → 2022-06-30 10:08 |
| 15 | Составление пользовательской документации | 2022-07-07 → 2022-07-12 17:51 (+5d) | 2022-07-29 → 2022-08-03 15:51 (+5d) |  |  |  | baseline start none → 2022-06-30 10:08; baseline finish none → 2022-07-21 17:08 |
| 16 | Конец проекта | 2022-07-29 → 2022-08-03 15:51 (+5d) | 2022-07-29 → 2022-08-03 15:51 (+5d) |  |  |  | baseline start none → 2022-07-21 17:08; baseline finish none → 2022-07-21 17:08 |
