# rk-variant2-8

How a schedule from MS Project changed from version to version. A marks actual dates.

## Version 1 (data date 2022-04-12, saved 2022-04-12, file rk-variant2-1_8.mpp)

Note of the change: Add EPI

| ID | WBS | Task | Duration | Start | Finish | Predecessors | Total float | Constraint |
| --- | --- | --- | --- | --- | --- | --- | --- | --- |
| 1 |  | Начало проекта | 0d | 2022-04-04 09:00 | 2022-04-04 09:00 |  | 0d |  |
| 2 | 2 | **Программирование** | 36.64d | 2022-04-05 09:00 | 2022-05-31 12:08 |  | 0d |  |
| 3 |  | Постановка задачи | 5d | 2022-04-05 09:00 | 2022-04-11 18:00 | 1FS+1d | 0d |  |
| 4 |  | Разработка интерфейса | 10d | 2022-04-12 09:00 | 2022-04-25 18:00 | 3 | 0.57d |  |
| 5 |  | Разработка модулей обработки данных | 16.07d | 2022-05-04 12:00 | 2022-05-30 16:34 | 4 | 0.57d |  |
| 6 |  | Разработка базы данных | 19.64d | 2022-04-12 09:00 | 2022-05-13 09:08 | 3 | 0d |  |
| 7 |  | Заполнение базы данных | 12d | 2022-05-13 09:08 | 2022-05-31 12:08 | 6 | 0d |  |
| 8 |  | Программирование завершено | 0d | 2022-05-31 12:08 | 2022-05-31 12:08 | 5, 7 | 0d |  |
| 9 | 4 | **Тестирование и отладка** | 24.43d | 2022-05-24 12:08 | 2022-06-29 14:34 |  | 15.57d |  |
| 10 |  | Подготовка тестовых наборов данных | 9.43d | 2022-05-24 12:08 | 2022-06-06 16:34 | 8FS-5d | 15.57d |  |
| 11 |  | Тестирование и исправление ошибок | 15d | 2022-06-06 16:34 | 2022-06-29 14:34 | 10 | 15.57d |  |
| 12 |  | Отладка завершена | 0d | 2022-06-29 14:34 | 2022-06-29 14:34 | 11 | 15.57d |  |
| 13 | 6 | **Разработка документации** | 25d | 2022-06-15 16:08 | 2022-07-21 17:08 |  | 0d |  |
| 14 |  | Составление программной документации | 10d | 2022-06-15 16:08 | 2022-06-30 10:08 | 8SS+10d | 0d |  |
| 15 |  | Составление пользовательской документации | 15d | 2022-06-30 10:08 | 2022-07-21 17:08 | 14 | 0d |  |
| 16 |  | Конец проекта | 0d | 2022-07-21 17:08 | 2022-07-21 17:08 | 15 | 0d |  |
| 17 | 8 | **Профилактика оборудования** | 54.5d | 2022-04-26 12:00 | 2022-07-19 16:00 |  | 2.14d |  |
| 18 |  | Профилактика оборудования 1 | 3h | 2022-04-26 12:00 | 2022-04-26 16:00 |  | 61.62d | start no earlier than 2022-04-26 09:00 |
| 19 |  | Профилактика оборудования 2 | 3h | 2022-05-11 09:00 | 2022-05-11 12:00 |  | 54d | start no earlier than 2022-05-10 09:00 |
| 20 |  | Профилактика оборудования 3 | 3h | 2022-05-24 12:00 | 2022-05-24 16:00 |  | 39.64d | start no earlier than 2022-05-24 09:00 |
| 21 |  | Профилактика оборудования 4 | 3h | 2022-06-07 12:00 | 2022-06-07 16:00 |  | 30.02d | start no earlier than 2022-06-07 09:00 |
| 22 |  | Профилактика оборудования 5 | 3h | 2022-06-21 12:00 | 2022-06-21 16:00 |  | 21.39d | start no earlier than 2022-06-21 09:00 |
| 23 |  | Профилактика оборудования 6 | 3h | 2022-07-05 12:00 | 2022-07-05 16:00 |  | 11.77d | start no earlier than 2022-07-05 09:00 |
| 24 |  | Профилактика оборудования 7 | 3h | 2022-07-19 12:00 | 2022-07-19 16:00 |  | 2.14d | start no earlier than 2022-07-19 09:00 |

## Version 2 (data date 2022-06-06, saved 2022-04-12, file rk-variant2-10.mpp)

Note of the change: Add EPI

Last finish 2022-07-21 → 2022-08-03 (+13d). Complete tasks 0 → 1.

Changed:

| ID | Task | Start | Finish | Duration | Complete | Total float | Other |
| --- | --- | --- | --- | --- | --- | --- | --- |
| 1 | Начало проекта |  |  |  |  |  | baseline start none → 2022-04-04 09:00; baseline finish none → 2022-04-04 09:00 |
| 2 | **Программирование** |  | 2022-05-31 12:08 → 2022-06-14 10:51 (+14d) | 36.64d → 45.11d |  |  | baseline start none → 2022-04-05 09:00; baseline finish none → 2022-05-31 12:08 |
| 3 | Постановка задачи |  |  |  |  |  | baseline start none → 2022-04-05 09:00; baseline finish none → 2022-04-11 18:00 |
| 4 | Разработка интерфейса |  |  |  |  | 0.57d → 0d | baseline start none → 2022-04-12 09:00; baseline finish none → 2022-04-25 18:00 |
| 5 | Разработка модулей обработки данных |  | 2022-05-30 16:34 → 2022-06-14 10:51 (+15d) | 16.07d → 20.11d |  | 0.57d → 0d | resources Программист 2; Программист 3 → Программист 2; Программист 3; Программист 1; baseline start none → 2022-05-04 12:00; baseline finish none → 2022-05-30 16:34 |
| 6 | Разработка базы данных |  |  |  |  | 0d → 14.47d | baseline start none → 2022-04-12 09:00; baseline finish none → 2022-05-13 09:08 |
| 7 | Заполнение базы данных |  | 2022-05-31 12:08 → 2022-05-23 09:08 (-8d) | 12d → 6d |  | 0d → 14.47d | resources Наборщик данных → Наборщик данных [200%]; baseline start none → 2022-05-13 09:08; baseline finish none → 2022-05-31 12:08 |
| 8 | Программирование завершено | 2022-05-31 12:08 → 2022-06-14 10:51 (+14d) | 2022-05-31 12:08 → 2022-06-14 10:51 (+14d) |  |  |  | baseline start none → 2022-05-31 12:08; baseline finish none → 2022-05-31 12:08 |
| 9 | **Тестирование и отладка** | 2022-05-24 12:08 → 2022-05-23 12:34 A (-1d) | 2022-06-29 14:34 → 2022-06-30 12:00 (+1d) | 24.43d → 25.8d | 0% → 43% | 15.57d → 23.23d | baseline start none → 2022-05-24 12:08; baseline finish none → 2022-06-29 14:34 |
| 10 | Подготовка тестовых наборов данных | 2022-05-24 12:08 → 2022-05-23 12:34 A (-1d) | 2022-06-06 16:34 → 2022-06-02 18:00 A (-4d) | 9.43d → 8.18d | 0% → 100% | 15.57d → none | baseline start none → 2022-05-24 12:08; baseline finish none → 2022-06-06 16:34 |
| 11 | Тестирование и исправление ошибок | 2022-06-06 16:34 → 2022-06-03 09:00 A (-3d) | 2022-06-29 14:34 → 2022-06-30 12:00 (+1d) | 15d → 17.62d | 0% → 17% | 15.57d → 23.23d | baseline start none → 2022-06-06 16:34; baseline finish none → 2022-06-29 14:34 |
| 12 | Отладка завершена | 2022-06-29 14:34 → 2022-06-30 12:00 (+1d) | 2022-06-29 14:34 → 2022-06-30 12:00 (+1d) |  |  | 15.57d → 23.23d | baseline start none → 2022-06-29 14:34; baseline finish none → 2022-06-29 14:34 |
| 13 | **Разработка документации** | 2022-06-15 16:08 → 2022-06-28 14:51 (+13d) | 2022-07-21 17:08 → 2022-08-03 15:51 (+13d) |  |  |  | resources Картриджи для принтера [200%]; Бумага → Картриджи для принтера [0.01 шт]; Бумага [0.01 пач]; baseline start none → 2022-06-15 16:08; baseline finish none → 2022-07-21 17:08 |
| 14 | Составление программной документации | 2022-06-15 16:08 → 2022-06-28 14:51 (+13d) | 2022-06-30 10:08 → 2022-07-12 17:51 (+12d) |  |  |  | baseline start none → 2022-06-15 16:08; baseline finish none → 2022-06-30 10:08 |
| 15 | Составление пользовательской документации | 2022-06-30 10:08 → 2022-07-12 17:51 (+12d) | 2022-07-21 17:08 → 2022-08-03 15:51 (+13d) |  |  |  | baseline start none → 2022-06-30 10:08; baseline finish none → 2022-07-21 17:08 |
| 16 | Конец проекта | 2022-07-21 17:08 → 2022-08-03 15:51 (+13d) | 2022-07-21 17:08 → 2022-08-03 15:51 (+13d) |  |  |  | baseline start none → 2022-07-21 17:08; baseline finish none → 2022-07-21 17:08 |
| 17 | **Профилактика оборудования** |  |  |  |  | 2.14d → 10.61d | baseline start none → 2022-04-26 12:00; baseline finish none → 2022-07-19 16:00 |
| 18 | Профилактика оборудования 1 |  |  |  |  | 61.62d → 55.7d | baseline start none → 2022-04-26 12:00; baseline finish none → 2022-04-26 16:00 |
| 19 | Профилактика оборудования 2 |  |  |  |  | 54d → 48.07d | baseline start none → 2022-05-11 09:00; baseline finish none → 2022-05-11 12:00 |
| 20 | Профилактика оборудования 3 |  |  |  |  | 39.64d → 39.07d | baseline start none → 2022-05-24 12:00; baseline finish none → 2022-05-24 16:00 |
| 21 | Профилактика оборудования 4 |  |  |  |  | 30.02d → 29.45d | baseline start none → 2022-06-07 12:00; baseline finish none → 2022-06-07 16:00 |
| 22 | Профилактика оборудования 5 |  |  |  |  | 21.39d → 20.82d | baseline start none → 2022-06-21 12:00; baseline finish none → 2022-06-21 16:00 |
| 23 | Профилактика оборудования 6 |  |  |  |  | 11.77d → 11.2d | baseline start none → 2022-07-05 12:00; baseline finish none → 2022-07-05 16:00 |
| 24 | Профилактика оборудования 7 |  |  |  |  | 2.14d → 10.61d | baseline start none → 2022-07-19 12:00; baseline finish none → 2022-07-19 16:00 |
